# Proyect1

How a schedule from MS Project changed from version to version. A marks actual dates.

## Version 1 (data date 2010-10-07, saved 2010-10-24)

Note of the change: Subo seguimiento de proyecto, registro de actividades y cronograma. Versiones 11.0.

| ID | WBS | Task | Duration | Start | Finish | Predecessors | Complete | Total float | Constraint |
| --- | --- | --- | --- | --- | --- | --- | --- | --- | --- |
| 1 | 1 | **Fase inicial** | 27.42d | 2010-08-09 09:00 A | 2010-09-05 19:00 A |  | 100% |  |  |
| 2 | 1.1 | **Iteración 1** | 13.42d | 2010-08-09 09:00 A | 2010-08-22 19:00 A |  | 100% |  |  |
| 3 |  | Relevar requerimientos | 15h | 2010-08-09 09:00 A | 2010-08-10 00:00 A |  | 100% |  | start no earlier than 2010-08-09 09:00 |
| 4 |  | Pautas GUI | 15h | 2010-08-09 09:00 A | 2010-08-10 00:00 A |  | 100% |  | start no earlier than 2010-08-09 09:00 |
| 5 |  | Modelo de dominio | 2h | 2010-08-22 17:00 A | 2010-08-22 19:00 A |  | 100% |  | finish no earlier than 2010-08-22 19:00 |
| 6 |  | Definir arquitectura | 15h | 2010-08-22 04:00 A | 2010-08-22 19:00 A |  | 100% |  | finish no earlier than 2010-08-22 19:00 |
| 7 | 1.2 | **Iteración 2** | 14d | 2010-08-22 19:00 A | 2010-09-05 19:00 A |  | 100% |  |  |
| 8 |  | Diseño prototipo | 10h | 2010-08-29 09:00 A | 2010-08-29 19:00 A | 3, 5, 6 | 100% |  | finish no earlier than 2010-08-29 19:00 |
| 9 |  | Descripción del proyecto | 10h | 2010-08-22 19:00 A | 2010-08-23 05:00 A | 3, 4, 5, 6 | 100% |  |  |
| 10 |  | Plan de desarrollo | 10h | 2010-09-05 09:00 A | 2010-09-05 19:00 A | 9 | 100% |  | finish no earlier than 2010-09-05 19:00 |
| 11 |  | Prototipo funcional | 16h | 2010-08-30 15:00 A | 2010-08-31 07:00 A | 8 | 100% |  | start no earlier than 2010-08-30 15:00 |
| 12 |  | Prototipo GUI | 15h | 2010-08-30 15:00 A | 2010-08-31 06:00 A | 4 | 100% |  | start no earlier than 2010-08-30 15:00 |
| 13 | 2 | **Fase elaboración** | 32.71d? | 2010-08-31 07:00 A | 2010-10-03 00:00 A |  | 100% |  |  |
| 14 | 2.1 | **Iteración 1** | 6.29d | 2010-08-31 07:00 A | 2010-09-06 14:00 A |  | 100% |  |  |
| 15 |  | Integración del prototipo | 6h | 2010-08-31 07:00 A | 2010-08-31 13:00 A | 8, 11 | 100% |  |  |
| 16 |  | Revisión de atributos de calidad | 5h | 2010-09-06 09:00 A | 2010-09-06 14:00 A | 9 | 100% |  | start no earlier than 2010-09-06 09:00 |
| 17 | 2.2 | **Iteración 2** | 28d? | 2010-09-05 00:00 A | 2010-10-03 00:00 A |  | 100% |  |  |
| 18 |  | Login a Facebook desde WP7 | 10h | 2010-09-05 00:00 A | 2010-09-05 10:00 A |  | 100% |  | start no earlier than 2010-09-05 00:00 |
| 19 |  | Integrar al proyecto módulo de Facebook | 10h | 2010-09-05 10:00 A | 2010-09-05 20:00 A | 18 | 100% |  |  |
| 20 |  | Filtrar sospechosos según datos | 10h | 2010-09-20 09:00 A | 2010-09-20 19:00 A |  | 100% |  |  |
| 21 |  | Armar tabla para datos sospechosos | 2h | 2010-09-20 19:00 A | 2010-09-20 21:00 A | 20 | 100% |  |  |
| 22 |  | Llenar tablas para pistas ciudad | 1.33d? | 2010-09-20 09:00 A | 2010-09-21 17:00 A |  | 100% |  |  |
| 23 |  | Parsear noticias de ciudad de Bing | 2d? | 2010-09-24 09:00 A | 2010-09-26 09:00 A | 22 | 100% |  |  |
| 24 |  | Servicios de Azure para WP7 para workflow de juego | 1.67d? | 2010-09-20 09:00 A | 2010-09-22 01:00 A |  | 100% |  |  |
| 25 |  | Armar iteración para usuario | 0.33d? | 2010-09-20 09:00 A | 2010-09-20 17:00 A |  | 100% |  |  |
| 26 |  | Modelar estructura de las pistas | 0.5d? | 2010-09-23 09:00 A | 2010-09-23 21:00 A | 25 | 100% |  |  |
| 27 |  | Llenar tablas con datos definitivos | 0.33d? | 2010-09-28 17:00 A | 2010-09-29 01:00 A | 26 | 100% |  |  |
| 28 |  | Integrar código workflow con Gui y datos | 0.25d? | 2010-09-30 09:00 A | 2010-10-01 17:00 A | 18, 25, 27 | 100% |  | start no earlier than 2010-09-30 09:00 |
| 29 |  | Validar arquitectura | 1d? | 2010-09-20 09:00 A | 2010-09-21 09:00 A |  | 100% |  |  |
| 30 |  | Reuniones para completar base de datos | 1.67d? | 2010-09-23 09:00 A | 2010-09-25 01:00 A | 29 | 100% |  | start no earlier than 2010-09-23 09:00 |
| 31 |  | Diseño iteración | 0.67d? | 2010-09-30 09:00 A | 2010-10-01 01:00 A | 30 | 100% |  | start no earlier than 2010-09-30 09:00 |
| 32 |  | Planificar verificación de iteración | 0.25d? | 2010-09-20 09:00 A | 2010-09-20 15:00 A |  | 100% |  |  |
| 33 |  | Armar casos de prueba generales | 0.67d? | 2010-09-21 09:00 A | 2010-09-22 01:00 A | 32 | 100% |  | start no earlier than 2010-09-21 09:00 |
| 34 |  | Diseñar casos de prueba generales | 0.58d? | 2010-09-28 09:00 A | 2010-09-28 23:00 A | 33 | 100% |  | start no earlier than 2010-09-28 09:00 |
| 35 |  | RTF Modelo CU | 0.67d? | 2010-09-20 09:00 A | 2010-09-21 01:00 A |  | 100% |  |  |
| 36 |  | RTF Arquitectura | 0.67d? | 2010-09-22 09:00 A | 2010-09-23 01:00 A | 35 | 100% |  | start no earlier than 2010-09-22 09:00 |
| 37 |  | RTF Proyecto | 0.17d? | 2010-09-24 09:00 A | 2010-09-24 13:00 A | 36 | 100% |  | start no earlier than 2010-09-24 09:00 |
| 38 |  | RTF Desarrollo | 0.67d? | 2010-09-27 09:00 A | 2010-09-28 01:00 A | 37 | 100% |  | start no earlier than 2010-09-27 09:00 |
| 39 |  | RTF SCM | 0.67d? | 2010-09-29 09:00 A | 2010-09-30 01:00 A | 38 | 100% |  | start no earlier than 2010-09-29 09:00 |
| 40 |  | RTF estimaciones | 0.33d? | 2010-10-01 09:00 A | 2010-10-01 17:00 A | 39 | 100% |  | start no earlier than 2010-10-01 09:00 |
| 41 |  | Animaciones Silverlight | 3.33d? | 2010-09-20 09:00 A | 2010-09-23 17:00 A |  | 100% |  |  |
| 42 |  | Verificar código FE-IT2 | 1.58d | 2010-09-20 09:00 A | 2010-09-21 23:00 A |  | 100% |  |  |
| 43 |  | Buffer de error | 3h | 2010-10-02 21:00 A | 2010-10-03 00:00 A |  | 100% |  | finish no earlier than 2010-10-03 00:00 |
| 44 |  | Integración | 5h | 2010-10-01 09:00 A | 2010-10-01 14:00 A |  | 100% |  | start no earlier than 2010-10-01 09:00 |
| 45 | 3 | **Fase construcción** | 35.17d? | 2010-10-03 00:00 A | 2010-11-07 04:00 |  | 59% | 7.92d |  |
| 46 | 3.1 | **Iteración 1** | 14.17d? | 2010-10-03 00:00 A | 2010-10-17 04:00 |  | 97% | 18.29d |  |
| 47 | 3.1.1 | **Semana 09** | 7.04d? | 2010-10-03 00:00 A | 2010-10-10 01:00 A |  | 100% |  |  |
| 48 | 3.1.1.1 | **Diseño / Implementación** | 5.62d | 2010-10-04 09:00 A | 2010-10-10 00:00 A |  | 100% |  |  |
| 49 |  | Fin pantallas principales | 10h | 2010-10-04 09:00 A | 2010-10-04 19:00 A |  | 100% |  | start no earlier than 2010-10-04 09:00 |
| 50 |  | Actualización diseño según lo implementado | 12h | 2010-10-04 09:00 A | 2010-10-04 21:00 A |  | 100% |  | start no earlier than 2010-10-04 09:00 |
| 51 |  | Actualización verificación unitaria versión beta | 4.17h | 2010-10-04 09:00 A | 2010-10-04 13:10 A |  | 100% |  | start no earlier than 2010-10-04 09:00 |
| 52 |  | Liberación versión beta 1.0 | 0h | 2010-10-10 00:00 A | 2010-10-10 00:00 A | 51, 54 | 100% |  | start no earlier than 2010-10-10 00:00 |
| 53 | 3.1.1.2 | **Verificación** | 0.12d | 2010-10-09 00:00 A | 2010-10-09 03:00 A |  | 100% |  |  |
| 54 | 3.1.1.2.1 | **Verificar casos de uso** | 0.12d | 2010-10-09 00:00 A | 2010-10-09 03:00 A |  | 100% |  |  |
| 55 |  | Verificación casos de uso Login, Iniciar iteración, guardar estado | 3h | 2010-10-09 00:00 A | 2010-10-09 03:00 A |  | 100% |  | start no earlier than 2010-10-09 00:00 |
| 56 |  | Verificación casos de uso Interrogar Personaje, Actualizar Famoso, Actualizar Ciudad | 3h | 2010-10-09 00:00 A | 2010-10-09 03:00 A |  | 100% |  | start no earlier than 2010-10-09 00:00 |
| 57 |  | Verificación casos de uso Obtener Ciudades, Viajar, Emitir orden de arresto, Arrestar | 3h | 2010-10-09 00:00 A | 2010-10-09 03:00 A |  | 100% |  | start no earlier than 2010-10-09 00:00 |
| 58 |  | Verificación casos de uso Listar Sospechoso, Filtrar sospechoso, Lenguaje, Salir | 3h | 2010-10-09 00:00 A | 2010-10-09 03:00 A |  | 100% |  | start no earlier than 2010-10-09 00:00 |
| 59 | 3.1.1.3 | **Gestión del Proyecto** | 6.17d | 2010-10-03 00:00 A | 2010-10-09 04:00 A |  | 100% |  |  |
| 60 |  | Seguimiento en jornadas implementación | 5h | 2010-10-03 00:00 A | 2010-10-03 05:00 A |  | 100% |  | start no earlier than 2010-10-03 00:00 |
| 61 |  | Presentación al director | 2h | 2010-10-05 00:00 A | 2010-10-05 02:00 A | 60 | 100% |  | start no earlier than 2010-10-05 00:00 |
| 62 |  | Gestión de riesgos | 1h | 2010-10-06 00:00 A | 2010-10-06 01:00 A | 61 | 100% |  | start no earlier than 2010-10-06 00:00 |
| 63 |  | Modificar cronograma | 4h | 2010-10-09 00:00 A | 2010-10-09 04:00 A | 60 | 100% |  | start no earlier than 2010-10-09 00:00 |
| 64 | 3.1.1.4 | **Gestión de la Calidad** | 5.19d? | 2010-10-04 09:00 A | 2010-10-09 13:30 A |  | 100% |  |  |
| 65 | 3.1.1.4.1 | **RTF Planificación del Proyecto** | 0.19d? | 2010-10-04 09:00 A | 2010-10-04 13:30 A |  | 100% |  |  |
| 66 |  | Estudio del Project del Proyecto | 1h? | 2010-10-04 09:00 A | 2010-10-04 10:00 A |  | 100% |  |  |
| 67 |  | Revisión Técnica | 1.5h? | 2010-10-04 10:00 A | 2010-10-04 11:30 A | 66 | 100% |  |  |
| 68 |  | Conclusiones, proponer acciones correctivas | 1h? | 2010-10-04 11:30 A | 2010-10-04 12:30 A | 67 | 100% |  |  |
| 69 |  | Seguimiento de la RTF | 1h? | 2010-10-04 12:30 A | 2010-10-04 13:30 A | 68 | 100% |  |  |
| 70 |  | Revisión de Documentos | 6h? | 2010-10-09 07:30 A | 2010-10-09 13:30 A | 73 | 100% |  |  |

| ID | WBS | Task | Duration | Start | Finish | Predecessors | Complete | Total float | Constraint |
| --- | --- | --- | --- | --- | --- | --- | --- | --- | --- |
| 71 | 3.1.1.5 | **Gestión de la Configuración** | 0.04d | 2010-10-10 00:00 A | 2010-10-10 01:00 A |  | 100% |  |  |
| 72 |  | Establecimiento de línea base de código | 1h | 2010-10-10 00:00 A | 2010-10-10 01:00 A | 52 | 100% |  | start no earlier than 2010-10-09 00:00 |
| 73 | 3.1.1.6 | **Entregables** | 4.94d? | 2010-10-04 09:00 A | 2010-10-09 07:30 A |  | 100% |  |  |
| 74 |  | Documento de evaluación y ajuste del plan de VyV | 2h | 2010-10-09 03:00 A | 2010-10-09 05:00 A | 53 | 100% |  |  |
| 75 |  | Evaluación de la verificación | 2h | 2010-10-09 00:00 A | 2010-10-09 02:00 A |  | 100% |  | start no earlier than 2010-10-09 00:00 |
| 76 |  | Informe de verificación de documento | 2h | 2010-10-09 00:00 A | 2010-10-09 02:00 A |  | 100% |  | start no earlier than 2010-10-09 00:00 |
| 77 |  | Reporte de pruebas | 4h | 2010-10-09 00:00 A | 2010-10-09 04:00 A |  | 100% |  | start no earlier than 2010-10-09 00:00 |
| 78 |  | Documento de evaluación y ajuste del plan de calidad | 2h | 2010-10-09 00:00 A | 2010-10-09 02:00 A |  | 100% |  | start no earlier than 2010-10-09 00:00 |
| 79 |  | Informe de revisión de SQA | 2h | 2010-10-09 00:00 A | 2010-10-09 02:00 A |  | 100% |  | start no earlier than 2010-10-09 00:00 |
| 80 |  | Informe de RTF | 1.5h | 2010-10-07 00:00 A | 2010-10-07 01:30 A |  | 100% |  | start no earlier than 2010-10-07 00:00 |
| 81 |  | Materiales para soporte al usuario | 2h | 2010-10-07 00:00 A | 2010-10-07 02:00 A |  | 100% |  | start no earlier than 2010-10-07 00:00 |
| 82 |  | Acta de reunión con el director del proyecto | 0.5h | 2010-10-06 00:00 A | 2010-10-06 00:30 A |  | 100% |  | start no earlier than 2010-10-06 00:00 |
| 83 |  | Documento de riesgos | 1h | 2010-10-06 00:00 A | 2010-10-06 01:00 A |  | 100% |  | start no earlier than 2010-10-06 00:00 |
| 84 |  | Informe de situación de proyecto | 1h | 2010-10-09 00:00 A | 2010-10-09 01:00 A |  | 100% |  | start no earlier than 2010-10-09 00:00 |
| 85 |  | Presentación al director del proyecto | 0.5d | 2010-10-04 09:00 A | 2010-10-04 21:00 A |  | 100% |  |  |
| 86 |  | Registro de actividades | 1h | 2010-10-09 00:00 A | 2010-10-09 01:00 A |  | 100% |  | start no earlier than 2010-10-09 00:00 |
| 87 |  | Modelo de diseño | 6h | 2010-10-09 00:00 A | 2010-10-09 06:00 A |  | 100% |  | start no earlier than 2010-10-09 00:00 |
| 88 |  | Plan de desarrollo | 2h | 2010-10-09 00:00 A | 2010-10-09 02:00 A |  | 100% |  | start no earlier than 2010-10-09 00:00 |
| 89 |  | Informe de integración | 2h | 2010-10-09 00:00 A | 2010-10-09 02:00 A |  | 100% |  | start no earlier than 2010-10-09 00:00 |
| 90 |  | Plan de integración de la iteración | 2h | 2010-10-09 00:00 A | 2010-10-09 02:00 A |  | 100% |  | start no earlier than 2010-10-09 00:00 |
| 91 |  | Informe de verificación unitaria | 0.5h? | 2010-10-09 00:00 A | 2010-10-09 00:30 A |  | 100% |  | start no earlier than 2010-10-09 00:00 |
| 92 |  | Descripción de la versión | 2h | 2010-10-09 00:00 A | 2010-10-09 02:00 A |  | 100% |  | start no earlier than 2010-10-09 00:00 |
| 93 |  | Informe de la línea base del proyecto | 3h | 2010-10-09 00:00 A | 2010-10-09 03:00 A |  | 100% |  | start no earlier than 2010-10-09 00:00 |
| 94 |  | Entrega semanal de SQA | 1.5h | 2010-10-09 06:00 A | 2010-10-09 07:30 A | 74, 75, 76, 77, 78, 79, 80, 81, 82, 83, 84, 85, 86, 87, 88, 89, 90, 91, 92, 93 | 100% |  |  |
| 95 |  | Buffer de error | 3h | 2010-10-09 21:00 A | 2010-10-10 00:00 A |  | 100% |  | finish no earlier than 2010-10-10 00:00 |
| 96 | 3.1.2 | **Semana 10** | 6.17d? | 2010-10-11 00:00 A | 2010-10-17 04:00 | 47 | 96% | 18.29d |  |
| 97 | 3.1.2.1 | **Diseño / Implementación** | 5.96d | 2010-10-11 00:00 A | 2010-10-16 23:00 |  | 73% | 18.5d |  |
| 98 |  | Armar datos Gran sospechoso | 10h | 2010-10-13 00:00 A | 2010-10-13 10:00 |  | 30% | 22.04d | start no earlier than 2010-10-13 00:00 |
| 99 |  | Depurar parser para traer noticias dinámicas | 5h | 2010-10-13 00:00 A | 2010-10-13 05:00 |  | 30% | 22.25d | start no earlier than 2010-10-13 00:00 |
| 100 |  | Armar algoritmo de tiempo para el juego | 2h | 2010-10-13 00:00 A | 2010-10-13 02:00 A |  | 100% |  | start no earlier than 2010-10-13 00:00 |
| 101 |  | Menú de ayuda | 4h | 2010-10-13 00:00 | 2010-10-13 04:00 |  |  | 22.29d | start no earlier than 2010-10-13 00:00 |
| 102 |  | Inicio pantallas inicio y fin del juego | 5h | 2010-10-13 00:00 A | 2010-10-13 05:00 A | 49 | 100% |  | start no earlier than 2010-10-13 00:00 |
| 103 |  | Inicio de código manejo multi-usuario | 10h | 2010-10-13 00:00 A | 2010-10-13 10:00 A |  | 100% |  | start no earlier than 2010-10-13 00:00 |
| 104 |  | Diseño casos de uso para iteración 1 | 5h | 2010-10-11 00:00 A | 2010-10-11 05:00 A | 50 | 100% |  | start no earlier than 2010-10-11 00:00 |
| 105 |  | Diseño casos de prueba para iteración 1 | 5h | 2010-10-11 00:00 A | 2010-10-11 05:00 A | 51 | 100% |  | start no earlier than 2010-10-11 00:00 |
| 106 |  | Verificación unitaria | 3h | 2010-10-16 16:00 A | 2010-10-16 19:00 A | 98, 99, 103 | 100% |  | finish no earlier than 2010-10-16 19:00 |
| 107 |  | Integración iteración 1 | 4h | 2010-10-16 19:00 A | 2010-10-16 23:00 A | 106 | 100% |  | start no earlier than 2010-10-15 09:00 |
| 108 | 3.1.2.2 | **Verificación** | 1.12d | 2010-10-11 00:00 A | 2010-10-12 03:00 A |  | 100% |  |  |
| 109 | 3.1.2.2.1 | **Verificar casos de uso** | 0.12d | 2010-10-11 00:00 A | 2010-10-11 03:00 A |  | 100% |  |  |
| 110 |  | Verificación casos de uso Login, Iniciar iteración, guardar estado | 3h | 2010-10-11 00:00 A | 2010-10-11 03:00 A |  | 100% |  | start no earlier than 2010-10-11 00:00 |
| 111 |  | Verificación casos de uso Interrogar Personaje, Actualizar Famoso, Actualizar Ciudad | 3h | 2010-10-11 00:00 A | 2010-10-11 03:00 A |  | 100% |  | start no earlier than 2010-10-11 00:00 |
| 112 |  | Verificación casos de uso Obtener Ciudades, Viajar, Emitir orden de arresto, Arrestar | 3h | 2010-10-11 00:00 A | 2010-10-11 03:00 A |  | 100% |  | start no earlier than 2010-10-11 00:00 |
| 113 |  | Verificación casos de uso Listar Sospechoso, Filtrar sospechoso, Lenguaje, Salir | 3h | 2010-10-11 00:00 A | 2010-10-11 03:00 A |  | 100% |  | start no earlier than 2010-10-11 00:00 |
| 114 | 3.1.2.2.2 | **Corregir casos de uso** | 0.12d | 2010-10-12 00:00 A | 2010-10-12 03:00 A |  | 100% |  |  |
| 115 |  | Corregir casos de uso Login, Iniciar iteración, guardar estado | 3h | 2010-10-12 00:00 A | 2010-10-12 03:00 A | 110 | 100% |  | start no earlier than 2010-10-12 00:00 |
| 116 |  | Corregir casos de uso Interrogar Personaje, Actualizar Famoso, Actualizar Ciudad | 3h | 2010-10-12 00:00 A | 2010-10-12 03:00 A | 111 | 100% |  | start no earlier than 2010-10-12 00:00 |
| 117 |  | Corregir casos de uso Obtener Ciudades, Viajar, Emitir orden de arresto, Arrestar | 3h | 2010-10-12 00:00 A | 2010-10-12 03:00 A | 112 | 100% |  | start no earlier than 2010-10-12 00:00 |
| 118 |  | Corregir casos de uso Listar Sospechoso, Filtrar sospechoso, Lenguaje, Salir | 3h | 2010-10-12 00:00 A | 2010-10-12 03:00 A | 113 | 100% |  | start no earlier than 2010-10-12 00:00 |
| 119 | 3.1.2.3 | **Gestión del Proyecto** | 6.17d | 2010-10-11 00:00 A | 2010-10-17 04:00 A |  | 100% |  |  |
| 120 |  | Seguimiento por medio de mails, conversaciones, revisión de objetivos de fase y pedido de informes | 3h | 2010-10-11 00:00 A | 2010-10-11 03:00 A |  | 100% |  | start no earlier than 2010-10-11 00:00 |
| 121 |  | Revisar estimaciones y medidas | 2h | 2010-10-12 00:00 A | 2010-10-12 02:00 A |  | 100% |  | start no earlier than 2010-10-12 00:00 |
| 122 |  | Preparar reunión quincenal | 2h | 2010-10-14 00:00 A | 2010-10-14 02:00 A | 120 | 100% |  | start no earlier than 2010-10-14 00:00 |
| 123 |  | Seguimiento en jornadas de implementación | 4h | 2010-10-17 00:00 A | 2010-10-17 04:00 A |  | 100% |  | start no earlier than 2010-10-17 00:00 |
| 124 | 3.1.2.4 | **Gestión de la Calidad** | 0.25d? | 2010-10-16 11:00 A | 2010-10-16 17:00 A |  | 100% |  |  |
| 125 |  | Revisión de Documentos | 6h? | 2010-10-16 11:00 A | 2010-10-16 17:00 A | 130 | 100% |  |  |
| 126 | 3.1.2.5 | **Gestión de la Configuración** | 3d? | 2010-10-13 00:00 A | 2010-10-16 00:00 A |  | 100% |  |  |
| 127 |  | Seguimiento de la línea base | 3d? | 2010-10-13 00:00 A | 2010-10-16 00:00 A |  | 100% |  | finish no earlier than 2010-10-16 00:00 |
| 128 |  | Control de cambios | 3d? | 2010-10-13 00:00 A | 2010-10-16 00:00 A |  | 100% |  | start no earlier than 2010-10-13 00:00 |
| 129 |  | Escribir notas de la versión | 3d? | 2010-10-13 00:00 A | 2010-10-16 00:00 A |  | 100% |  | start no earlier than 2010-10-13 00:00 |
| 130 | 3.1.2.6 | **Entregables** | 2.46d | 2010-10-14 00:00 A | 2010-10-16 11:00 A |  | 100% |  |  |
| 131 |  | Modelo de casos de prueba | 10h | 2010-10-16 00:00 A | 2010-10-16 10:00 A |  | 100% |  | start no earlier than 2010-10-16 00:00 |
| 132 |  | Plan de verificación de la iteración | 3h | 2010-10-16 00:00 A | 2010-10-16 03:00 A |  | 100% |  | start no earlier than 2010-10-16 00:00 |
| 133 |  | Materiales para capacitación | 2h | 2010-10-14 00:00 A | 2010-10-14 02:00 A |  | 100% |  | start no earlier than 2010-10-14 00:00 |
| 134 |  | Materiales para soporte al usuario | 2h | 2010-10-14 00:00 A | 2010-10-14 02:00 A |  | 100% |  | start no earlier than 2010-10-14 00:00 |
| 135 |  | Acta de reunión de equipo | 0.5h | 2010-10-16 00:00 A | 2010-10-16 00:30 A |  | 100% |  | start no earlier than 2010-10-16 00:00 |
| 136 |  | Documento de riesgos | 0.5h | 2010-10-16 00:00 A | 2010-10-16 00:30 A |  | 100% |  | start no earlier than 2010-10-16 00:00 |
| 137 |  | Documento de validación con el cliente | 0.5h | 2010-10-14 00:00 A | 2010-10-14 00:30 A |  | 100% |  | start no earlier than 2010-10-14 00:00 |
| 138 |  | Informe de situación de proyecto | 1h | 2010-10-16 00:00 A | 2010-10-16 01:00 A |  | 100% |  | start no earlier than 2010-10-16 00:00 |
| 139 |  | Lecciones Aprendidas | 0.5h | 2010-10-16 00:00 A | 2010-10-16 00:30 A |  | 100% |  | start no earlier than 2010-10-16 00:00 |
| 140 |  | Plan de la iteración | 2h | 2010-10-16 00:00 A | 2010-10-16 02:00 A |  | 100% |  | start no earlier than 2010-10-16 00:00 |

| ID | WBS | Task | Duration | Start | Finish | Predecessors | Complete | Total float | Constraint |
| --- | --- | --- | --- | --- | --- | --- | --- | --- | --- |
| 141 |  | Registro de actividades | 1h | 2010-10-16 00:00 A | 2010-10-16 01:00 A |  | 100% |  | start no earlier than 2010-10-16 00:00 |
| 142 |  | Modelo de Datos | 1h | 2010-10-16 00:00 A | 2010-10-16 01:00 A |  | 100% |  | start no earlier than 2010-10-16 00:00 |
| 143 |  | Modelo de diseño | 4h | 2010-10-16 00:00 A | 2010-10-16 04:00 A |  | 100% |  | start no earlier than 2010-10-16 00:00 |
| 144 |  | Modelo de Implementación | 2h | 2010-10-16 00:00 A | 2010-10-16 02:00 A |  | 100% |  | start no earlier than 2010-10-16 00:00 |
| 145 |  | Ejecutable de la Iteración | 0h | 2010-10-16 00:00 A | 2010-10-16 00:00 A |  | 100% |  | start no earlier than 2010-10-16 00:00 |
| 146 |  | Informe de integración | 1h | 2010-10-16 00:00 A | 2010-10-16 01:00 A |  | 100% |  | start no earlier than 2010-10-16 00:00 |
| 147 |  | Plan de integración de la iteración | 1h | 2010-10-16 00:00 A | 2010-10-16 01:00 A |  | 100% |  | start no earlier than 2010-10-16 00:00 |
| 148 |  | Gestión de cambios | 1h | 2010-10-16 00:00 A | 2010-10-16 01:00 A |  | 100% |  | start no earlier than 2010-10-16 00:00 |
| 149 |  | Notas de la versión | 3h | 2010-10-16 00:00 A | 2010-10-16 03:00 A |  | 100% |  | start no earlier than 2010-10-16 00:00 |
| 150 |  | Registro de versiones | 2h | 2010-10-16 00:00 A | 2010-10-16 02:00 A |  | 100% |  | start no earlier than 2010-10-16 00:00 |
| 151 |  | Entrega semanal de SQA | 1h | 2010-10-16 10:00 A | 2010-10-16 11:00 A | 131, 132, 133, 134, 135, 136, 137, 138, 139, 140, 141, 142, 143, 144, 145, 146, 147, 148, 149, 150 | 100% |  | start no earlier than 2010-10-16 00:00 |
| 152 |  | Presentación al cliente | 0h | 2010-10-13 00:00 A | 2010-10-13 00:00 A |  | 100% |  | start no earlier than 2010-10-13 00:00 |
| 153 |  | Buffer de error | 1h? | 2010-10-17 00:00 A | 2010-10-17 01:00 A |  | 100% |  | start no earlier than 2010-10-17 00:00 |
| 154 | 3.2 | **Iteración 2** | 21d? | 2010-10-17 04:00 A | 2010-11-07 04:00 | 46 | 50% | 7.92d |  |
| 155 | 3.2.1 | **Semana 11** | 6.88d? | 2010-10-17 04:00 A | 2010-10-24 01:00 | 96 | 96% | 22.04d |  |
| 156 | 3.2.1.1 | **Diseño / Implementación** | 6.83d? | 2010-10-17 04:00 A | 2010-10-24 00:00 |  | 91% | 22.08d |  |
| 157 | 3.2.1.1.1 | **Azure** | 5.83d? | 2010-10-17 04:00 A | 2010-10-23 00:00 |  | 86% | 23.08d |  |
| 158 |  | Diseño del tiempo | 1d? | 2010-10-18 00:00 A | 2010-10-19 00:00 A |  | 100% |  | start no earlier than 2010-10-18 00:00 |
| 159 |  | Página de administrador | 1d? | 2010-10-20 00:00 A | 2010-10-21 00:00 A | 163 | 100% |  |  |
| 160 |  | Algoritmo para generar sospechosos a partir de los reales | 5d? | 2010-10-18 00:00 A | 2010-10-23 00:00 A |  | 100% |  | finish no earlier than 2010-10-23 00:00 |
| 161 |  | Soporte multiusuario | 1.83d? | 2010-10-17 04:00 A | 2010-10-19 00:00 A |  | 100% |  | finish no earlier than 2010-10-19 00:00 |
| 162 |  | Soporte del "Gran sospechoso" | 1d? | 2010-10-19 00:00 A | 2010-10-20 00:00 | 161 | 50% | 26.08d |  |
| 163 |  | Depurar pistas dinámicas | 1d? | 2010-10-18 00:00 | 2010-10-19 00:00 |  |  | 27.08d | start no earlier than 2010-10-18 00:00 |
| 164 | 3.2.1.1.2 | **WP7** | 1d? | 2010-10-23 00:00 A | 2010-10-24 00:00 A |  | 100% |  |  |
| 165 |  | Listas datos sospechosos | 1d? | 2010-10-23 00:00 A | 2010-10-24 00:00 A | 166 | 100% |  |  |
| 166 |  | Adaptación de servicios de Azure a WP7 | 5d? | 2010-10-18 00:00 A | 2010-10-23 00:00 A |  | 100% |  | finish no earlier than 2010-10-23 00:00 |
| 167 | 3.2.1.2 | **Verificación** | 3d? | 2010-10-18 00:00 A | 2010-10-21 00:00 A |  | 100% |  |  |
| 168 | 3.2.1.2.1 | **Verificación casos de uso** | 2d? | 2010-10-18 00:00 A | 2010-10-20 00:00 A |  | 100% |  |  |
| 169 |  | Verificar funcionamiento multi usuario | 2d? | 2010-10-18 00:00 A | 2010-10-20 00:00 A |  | 100% |  | finish no earlier than 2010-10-20 00:00 |
| 170 |  | Verificar GUI | 2d? | 2010-10-18 00:00 A | 2010-10-20 00:00 A |  | 100% |  | finish no earlier than 2010-10-20 00:00 |
| 171 |  | Verificar sospechosos Facebook | 2d? | 2010-10-18 00:00 A | 2010-10-20 00:00 A |  | 100% |  | finish no earlier than 2010-10-20 00:00 |
| 172 |  | Verificación ciclos de vida | 2d? | 2010-10-18 00:00 A | 2010-10-20 00:00 A |  | 100% |  | finish no earlier than 2010-10-20 00:00 |
| 173 | 3.2.1.2.2 | **Corregir casos de uso** | 1d? | 2010-10-20 00:00 A | 2010-10-21 00:00 A |  | 100% |  |  |
| 174 |  | Corregir multi usuario | 1d? | 2010-10-20 00:00 A | 2010-10-21 00:00 A | 169 | 100% |  |  |
| 175 |  | Corregir GUI | 1d? | 2010-10-20 00:00 A | 2010-10-21 00:00 A | 170 | 100% |  |  |
| 176 |  | Corregir sospechosos FB | 1d? | 2010-10-20 00:00 A | 2010-10-21 00:00 A | 171 | 100% |  |  |
| 177 |  | Corregir errores encontrados en ciclos de vida | 1d? | 2010-10-20 00:00 A | 2010-10-21 00:00 A | 172 | 100% |  |  |
| 178 | 3.2.1.3 | **Gestión del Proyecto** | 2.92d | 2010-10-17 04:00 A | 2010-10-20 02:00 A |  | 100% |  |  |
| 179 |  | Seguimiento por medio de mails, conversaciones, revisión de objetivos de fase y pedido de informes | 3h | 2010-10-17 04:00 A | 2010-10-17 07:00 A |  | 100% |  | start no earlier than 2010-10-11 00:00 |
| 180 |  | Seguimiento de riesgos | 2h | 2010-10-20 00:00 A | 2010-10-20 02:00 A |  | 100% |  | start no earlier than 2010-10-20 00:00 |
| 181 | 3.2.1.4 | **Gestión de la Calidad** | 0.21d? | 2010-10-17 04:00 A | 2010-10-17 09:00 A |  | 100% |  |  |
| 182 | 3.2.1.4.1 | **RTF del Código** | 0.21d? | 2010-10-17 04:00 A | 2010-10-17 09:00 A |  | 100% |  |  |
| 183 |  | Estudio del Project del Proyecto | 1h? | 2010-10-17 04:00 A | 2010-10-17 05:00 A |  | 100% |  |  |
| 184 |  | Revisión Técnica | 2h? | 2010-10-17 05:00 A | 2010-10-17 07:00 A | 183 | 100% |  |  |
| 185 |  | Conclusiones, proponer acciones correctivas | 1h? | 2010-10-17 07:00 A | 2010-10-17 08:00 A | 184 | 100% |  |  |
| 186 |  | Seguimiento de la RTF | 1h? | 2010-10-17 08:00 A | 2010-10-17 09:00 A | 185 | 100% |  |  |
| 187 |  | Revisión de Documentos | 6h? | 2010-10-17 04:00 A | 2010-10-17 10:00 A |  | 100% |  |  |
| 188 | 3.2.1.6 | **Gestión de la Configuración** | 4d? | 2010-10-20 00:00 A | 2010-10-24 00:00 A |  | 100% |  |  |
| 189 |  | Seguimiento de la línea base | 3d? | 2010-10-20 00:00 A | 2010-10-23 00:00 A |  | 100% |  | finish no earlier than 2010-10-23 00:00 |
| 190 |  | Describir la versión | 3d? | 2010-10-20 00:00 A | 2010-10-23 00:00 A |  | 100% |  | start no earlier than 2010-10-20 00:00 |
| 191 |  | Control de cambios | 3d? | 2010-10-20 00:00 A | 2010-10-23 00:00 A |  | 100% |  | start no earlier than 2010-10-20 00:00 |
| 192 |  | Escribir notas de la versión | 1d? | 2010-10-23 00:00 A | 2010-10-24 00:00 A | 190 | 100% |  | finish no earlier than 2010-10-24 00:00 |
| 193 | 3.2.1.7 | **Entregables** | 2.23d | 2010-10-21 00:00 A | 2010-10-23 05:30 A |  | 100% |  |  |
| 194 |  | Documento de evaluación y ajuste del plan de VyV | 2h | 2010-10-23 00:00 A | 2010-10-23 02:00 A |  | 100% |  | start no earlier than 2010-10-23 00:00 |
| 195 |  | Evaluación de la verificación | 3h | 2010-10-23 00:00 A | 2010-10-23 03:00 A |  | 100% |  | start no earlier than 2010-10-23 00:00 |
| 196 |  | Informe de verificación de documento (Documentación técnica) | 2h | 2010-10-23 00:00 A | 2010-10-23 02:00 A |  | 100% |  | start no earlier than 2010-10-23 00:00 |
| 197 |  | Reporte de pruebas | 4h | 2010-10-23 00:00 A | 2010-10-23 04:00 A |  | 100% |  | start no earlier than 2010-10-23 00:00 |
| 198 |  | Documento de evaluación y ajuste del plan de calidad | 2h | 2010-10-23 00:00 A | 2010-10-23 02:00 A |  | 100% |  | start no earlier than 2010-10-23 00:00 |
| 199 |  | Informe de revisión de SQA | 2h | 2010-10-23 00:00 A | 2010-10-23 02:00 A |  | 100% |  | start no earlier than 2010-10-23 00:00 |
| 200 |  | Informe de RTF | 1.5h | 2010-10-23 00:00 A | 2010-10-23 01:30 A | 185 | 100% |  | start no earlier than 2010-10-23 00:00 |
| 201 |  | Materiales para capacitación | 2h | 2010-10-21 00:00 A | 2010-10-21 02:00 A |  | 100% |  | start no earlier than 2010-10-21 00:00 |
| 202 |  | Materiales para soporte al usuario | 2h | 2010-10-21 00:00 A | 2010-10-21 02:00 A |  | 100% |  | start no earlier than 2010-10-21 00:00 |
| 203 |  | Documento de Evaluación y Ajustes al Plan del Proyecto | 1h | 2010-10-23 00:00 A | 2010-10-23 01:00 A |  | 100% |  | start no earlier than 2010-10-23 00:00 |
| 204 |  | Informe de situación de proyecto | 1h | 2010-10-23 00:00 A | 2010-10-23 01:00 A |  | 100% |  | start no earlier than 2010-10-23 00:00 |
| 205 |  | Registro de actividades | 1h | 2010-10-23 00:00 A | 2010-10-23 01:00 A |  | 100% |  | start no earlier than 2010-10-23 00:00 |
| 206 |  | Documentación técnica | 1h | 2010-10-23 00:00 A | 2010-10-23 01:00 A |  | 100% |  | start no earlier than 2010-10-23 00:00 |
| 207 |  | Plan de desarrollo | 1h | 2010-10-23 00:00 A | 2010-10-23 01:00 A |  | 100% |  | start no earlier than 2010-10-23 00:00 |
| 208 |  | Ejecutable de la Iteración | 0h | 2010-10-23 00:00 A | 2010-10-23 00:00 A |  | 100% |  | start no earlier than 2010-10-23 00:00 |
| 209 |  | Informe de verificación unitaria | 0.5h | 2010-10-23 00:00 A | 2010-10-23 00:30 A |  | 100% |  | start no earlier than 2010-10-23 00:00 |
| 210 |  | Descripción de la versión | 2h | 2010-10-23 00:00 A | 2010-10-23 02:00 A |  | 100% |  | start no earlier than 2010-10-23 00:00 |

| ID | WBS | Task | Duration | Start | Finish | Predecessors | Complete | Total float | Constraint |
| --- | --- | --- | --- | --- | --- | --- | --- | --- | --- |
| 211 |  | Informe de la línea base del proyecto | 3h | 2010-10-23 00:00 A | 2010-10-23 03:00 A |  | 100% |  | start no earlier than 2010-10-23 00:00 |
| 212 |  | Entrega semanal de SQA | 1.5h | 2010-10-23 04:00 A | 2010-10-23 05:30 A | 194, 195, 196, 197, 198, 199, 200, 201, 202, 203, 204, 205, 206, 207, 208, 209, 210, 211 | 100% |  |  |
| 213 |  | Buffer de error | 1h? | 2010-10-24 00:00 A | 2010-10-24 01:00 A |  | 100% |  | start no earlier than 2010-10-24 00:00 |
| 214 | 3.2.2 | **Semana 12** | 14.1d? | 2010-10-24 01:00 | 2010-11-07 03:30 | 213 |  | 7.94d |  |
| 215 | 3.2.2.1 | **Diseño / Implementación** | 6.96d? | 2010-10-24 01:00 | 2010-10-31 00:00 |  |  | 15.04d |  |
| 216 | 3.2.2.1.1 | **Azure** | 5.96d? | 2010-10-24 01:00 | 2010-10-30 00:00 |  |  | 16.08d |  |
| 217 | 3.2.2.1.1.1 | **Comportamiento del juego según nivel** | 5.96d? | 2010-10-24 01:00 | 2010-10-30 00:00 |  |  | 16.08d |  |
| 218 |  | Orden de las pistas | 1d? | 2010-10-29 00:00 | 2010-10-30 00:00 | 160, 158 |  | 16.08d | finish no earlier than 2010-10-30 00:00 |
| 219 |  | Tiempo substraido por actividad del jugador | 0.67d? | 2010-10-29 08:00 | 2010-10-30 00:00 | 158 |  | 16.08d | finish no earlier than 2010-10-30 00:00 |
| 220 |  | Depurar pistas dinámicas | 1.96d? | 2010-10-24 01:00 | 2010-10-26 00:00 |  |  | 20.08d | finish no earlier than 2010-10-26 00:00 |
| 221 | 3.2.2.1.2 | **WP7** | 6d? | 2010-10-25 00:00 | 2010-10-31 00:00 |  |  | 14.08d |  |
| 222 |  | Pantalla Inicio | 1d? | 2010-10-27 00:00 | 2010-10-28 00:00 | 165 |  | 12.08d | finish no earlier than 2010-10-28 00:00 |
| 223 |  | Pantalla Fin | 1d? | 2010-10-30 00:00 | 2010-10-31 00:00 | 222 |  | 10.08d | finish no earlier than 2010-10-31 00:00 |
| 224 |  | Dibujo personajes para pantalla | 1d? | 2010-10-25 00:00 | 2010-10-26 00:00 |  |  | 20.08d | start no earlier than 2010-10-25 00:00 |
| 225 |  | Verificación | 1d? | 2010-10-24 01:00 | 2010-10-25 01:00 |  |  | 17.04d |  |
| 226 | 3.2.2.3 | **Gestión del Proyecto** | 3.08d | 2010-10-25 00:00 | 2010-10-28 02:00 |  |  | 18d |  |
| 227 |  | Seguimiento por medio de mails, conversaciones, revisión de objetivos de fase y pedido de informes | 3h | 2010-10-25 00:00 | 2010-10-25 03:00 |  |  | 20.96d | start no earlier than 2010-10-25 00:00 |
| 228 |  | Preparar reunión quincenal | 2h | 2010-10-28 00:00 | 2010-10-28 02:00 |  |  | 18d | start no earlier than 2010-10-28 00:00 |
| 229 | 3.2.2.4 | **Gestión de la Calidad** | 0.25d? | 2010-10-24 01:00 | 2010-10-24 07:00 |  |  | 21.79d |  |
| 230 | 3.2.2.4.1 | **RTF Planificación del Proyecto** | 0.08d? | 2010-10-24 01:00 | 2010-10-24 03:00 |  |  | 21.88d |  |
| 231 |  | Estudio del Project del Proyecto | 1h? | 2010-10-24 01:00 | 2010-10-24 02:00 |  |  | 22d |  |
| 232 |  | Revisión Técnica | 2h? | 2010-10-24 01:00 | 2010-10-24 03:00 |  |  | 21.96d |  |
| 233 |  | Conclusiones, proponer acciones correctivas | 1h? | 2010-10-24 01:00 | 2010-10-24 02:00 |  |  | 21.88d |  |
| 234 |  | Seguimiento de la RTF | 1h? | 2010-10-24 01:00 | 2010-10-24 02:00 |  |  | 22d |  |
| 235 |  | Revisión de Documentos | 6h? | 2010-10-24 01:00 | 2010-10-24 07:00 |  |  | 21.79d | start no earlier than 2010-10-17 01:00 |
| 236 | 3.2.2.5 | **Gestión de la Configuración** | 4d? | 2010-10-27 00:00 | 2010-10-31 00:00 |  |  | 15.08d |  |
| 237 |  | Seguimiento de la línea base | 3d? | 2010-10-27 00:00 | 2010-10-30 00:00 |  |  | 16.08d | finish no earlier than 2010-10-30 00:00 |
| 238 |  | Control de cambios | 3d? | 2010-10-27 00:00 | 2010-10-30 00:00 |  |  | 16.08d | start no earlier than 2010-10-27 00:00 |
| 239 |  | Describir la versión | 3d? | 2010-10-27 00:00 | 2010-10-30 00:00 | 225 |  | 15.08d | start no earlier than 2010-10-27 00:00 |
| 240 |  | Escribir notas de la versión | 1d? | 2010-10-30 00:00 | 2010-10-31 00:00 | 239 |  | 15.08d | finish no earlier than 2010-10-31 00:00 |
| 241 | 3.2.2.6 | **Entregables** | 10.15d | 2010-10-28 00:00 | 2010-11-07 03:30 |  |  | 7.94d |  |
| 242 |  | Evaluación de la verificación | 2h | 2010-10-30 00:00 | 2010-10-30 02:00 |  |  | 15.94d | start no earlier than 2010-10-30 00:00 |
| 243 |  | Modelo de casos de prueba | 5h | 2010-10-30 00:00 | 2010-10-30 05:00 |  |  | 15.81d | start no earlier than 2010-10-30 00:00 |
| 244 |  | Plan de verificación de la iteración | 2h | 2010-10-30 00:00 | 2010-10-30 02:00 |  |  | 15.94d | start no earlier than 2010-10-30 00:00 |
| 245 |  | Reporte de pruebas | 4h | 2010-10-30 00:00 | 2010-10-30 04:00 |  |  | 15.85d | start no earlier than 2010-10-30 00:00 |
| 246 |  | Informe de RTF | 1.5h | 2010-10-30 00:00 | 2010-10-30 01:30 | 233 |  | 15.96d | start no earlier than 2010-10-30 00:00 |
| 247 |  | Materiales para capacitación | 2h | 2010-10-28 00:00 | 2010-10-28 02:00 |  |  | 17.94d | start no earlier than 2010-10-28 00:00 |
| 248 |  | Materiales para soporte al usuario | 2h | 2010-10-28 00:00 | 2010-10-28 02:00 |  |  | 17.94d | start no earlier than 2010-10-28 00:00 |
| 249 |  | Informe de situación de proyecto | 1h | 2010-10-30 00:00 | 2010-10-30 01:00 |  |  | 15.98d | start no earlier than 2010-10-30 00:00 |
| 250 |  | Lecciones Aprendidas | 0.5h | 2010-10-30 00:00 | 2010-10-30 00:30 |  |  | 16d | start no earlier than 2010-10-30 00:00 |
| 251 |  | Presentación del sistema | 3h | 2010-10-30 00:00 | 2010-10-30 03:00 |  |  | 15.9d | start no earlier than 2010-10-30 00:00 |
| 252 |  | Registro de actividades | 1h | 2010-10-30 00:00 | 2010-10-30 01:00 |  |  | 15.98d | start no earlier than 2010-10-30 00:00 |
| 253 |  | Documentación técnica | 1h | 2010-10-30 00:00 | 2010-10-30 01:00 |  |  | 15.98d | start no earlier than 2010-10-30 00:00 |
| 254 |  | Plan de desarrollo | 1h | 2010-10-30 00:00 | 2010-10-30 01:00 |  |  | 15.98d | start no earlier than 2010-10-30 00:00 |
| 255 |  | Informe de integración | 1h | 2010-10-30 00:00 | 2010-10-30 01:00 |  |  | 15.98d | start no earlier than 2010-10-30 00:00 |
| 256 |  | Descripción de la versión | 2h | 2010-10-30 00:00 | 2010-10-30 02:00 |  |  | 15.94d | start no earlier than 2010-10-30 00:00 |
| 257 |  | Gestión de cambios | 1h | 2010-10-30 00:00 | 2010-10-30 01:00 |  |  | 15.98d | start no earlier than 2010-10-30 00:00 |
| 258 |  | Notas de la versión | 3h | 2010-10-30 00:00 | 2010-10-30 03:00 |  |  | 15.9d | start no earlier than 2010-10-30 00:00 |
| 259 |  | Registro de versiones | 2h | 2010-10-30 00:00 | 2010-10-30 02:00 |  |  | 15.94d | start no earlier than 2010-10-30 00:00 |
| 260 |  | Entrega semanal de SQA | 1.5h | 2010-11-07 02:00 | 2010-11-07 03:30 | 242, 243, 244, 245, 246, 247, 248, 249, 250, 251, 252, 253, 254, 255, 256, 257, 258, 259, 290, 291, 292 |  | 7.94d |  |
| 261 |  | Presentación al cliente | 0h | 2010-10-27 00:00 | 2010-10-27 00:00 |  |  | 19.08d | start no earlier than 2010-10-27 00:00 |
| 262 |  | Buffer de error | 1h? | 2010-10-31 00:00 | 2010-10-31 01:00 |  |  | 10.04d | start no earlier than 2010-10-31 00:00 |
| 263 | 3.2.3 | **Semana 13** | 7.12d? | 2010-10-31 01:00 | 2010-11-07 04:00 | 262 |  | 7.92d |  |
| 264 | 3.2.3.1 | **Diseño / Implementación** | 6.96d? | 2010-10-31 01:00 | 2010-11-07 00:00 |  |  | 8.08d |  |
| 265 |  | Azure | 1d? | 2010-10-31 01:00 | 2010-11-01 01:00 |  |  | 14.04d |  |
| 266 | 3.2.3.1.2 | **WP7** | 6.96d? | 2010-10-31 01:00 | 2010-11-07 00:00 |  |  | 8.08d |  |
| 267 |  | Destino geográfico del avión real | 3d? | 2010-10-31 01:00 | 2010-11-03 01:00 | 223 |  | 10.04d | start no earlier than 2010-10-31 00:00 |
| 268 |  | Mejoras estéticas | 2d? | 2010-11-05 00:00 | 2010-11-07 00:00 | 267 |  | 8.08d | finish no earlier than 2010-11-07 00:00 |
| 269 | 3.2.3.2 | **Verificación** | 0.75d? | 2010-11-05 06:00 | 2010-11-06 00:00 |  |  | 9.08d |  |
| 270 |  | Ciclos de vida (a definir) | 0.75d? | 2010-11-05 06:00 | 2010-11-06 00:00 |  |  | 9.08d | finish no earlier than 2010-11-06 00:00 |
| 271 | 3.2.3.3 | **Gestión del Proyecto** | 6.17d | 2010-11-01 00:00 | 2010-11-07 04:00 |  |  | 7.92d |  |
| 272 |  | Seguimiento por medio de mails, conversaciones, revisión de objetivos de fase y pedido de informes | 3h | 2010-11-01 00:00 | 2010-11-01 03:00 |  |  | 13.96d | start no earlier than 2010-11-01 00:00 |
| 273 |  | Evaluar la fase | 2h | 2010-11-04 00:00 | 2010-11-04 02:00 |  |  | 11d | start no earlier than 2010-11-04 00:00 |
| 274 |  | Seguimiento en jornadas de implementación | 4h | 2010-11-07 00:00 | 2010-11-07 04:00 |  |  | 7.92d | start no earlier than 2010-11-07 00:00 |
| 275 |  | Preparar reunión fin de fase | 2h | 2010-11-04 00:00 | 2010-11-04 02:00 |  |  | 11d | start no earlier than 2010-11-04 00:00 |
| 276 | 3.2.3.4 | **Gestión de la Calidad** | 0.25d? | 2010-10-31 01:00 | 2010-10-31 07:00 |  |  | 14.79d |  |
| 277 |  | Revisión de Documentos | 6h? | 2010-10-31 01:00 | 2010-10-31 07:00 |  |  | 14.79d | start no earlier than 2010-10-17 01:00 |
| 278 | 3.2.3.5 | **Gestión de la Configuración** | 3d? | 2010-11-03 00:00 | 2010-11-06 00:00 |  |  | 9.08d |  |
| 279 |  | Seguimiento de la línea base | 3d? | 2010-11-03 00:00 | 2010-11-06 00:00 |  |  | 9.08d | finish no earlier than 2010-11-06 00:00 |
| 280 |  | Control de cambios | 3d? | 2010-11-03 00:00 | 2010-11-06 00:00 |  |  | 9.08d | start no earlier than 2010-11-03 00:00 |

| ID | WBS | Task | Duration | Start | Finish | Predecessors | Total float | Constraint |
| --- | --- | --- | --- | --- | --- | --- | --- | --- |
| 281 |  | Escribir notas de la versión | 3d? | 2010-11-03 00:00 | 2010-11-06 00:00 |  | 9.08d | start no earlier than 2010-11-03 00:00 |
| 282 | 3.2.3.6 | **Entregables** | 4.08d | 2010-11-03 00:00 | 2010-11-07 02:00 |  | 8d |  |
| 283 |  | Evaluación de la verificación | 2h | 2010-11-06 00:00 | 2010-11-06 02:00 |  | 8.94d | start no earlier than 2010-11-06 00:00 |
| 284 |  | Informe de verificación del sistema | 3h | 2010-11-06 00:00 | 2010-11-06 03:00 |  | 8.9d | start no earlier than 2010-11-06 00:00 |
| 285 |  | Reporte de pruebas | 5h | 2010-11-06 00:00 | 2010-11-06 05:00 |  | 8.81d | start no earlier than 2010-11-06 00:00 |
| 286 |  | Reporte Final de Pruebas de Aceptación | 4h | 2010-11-06 00:00 | 2010-11-06 04:00 |  | 8.85d | start no earlier than 2010-11-06 00:00 |
| 287 |  | Informe de revisión de SQA | 2h | 2010-11-06 00:00 | 2010-11-06 02:00 |  | 8.94d | start no earlier than 2010-11-06 00:00 |
| 288 |  | Materiales para capacitación | 2h | 2010-11-04 00:00 | 2010-11-04 02:00 |  | 10.94d | start no earlier than 2010-11-04 00:00 |
| 289 |  | Materiales para soporte al usuario | 2h | 2010-11-04 00:00 | 2010-11-04 02:00 |  | 10.94d | start no earlier than 2010-11-04 00:00 |
| 290 |  | Acta de reunión de equipo | 0.5h | 2010-11-07 00:00 | 2010-11-07 00:30 |  | 8d | start no earlier than 2010-11-07 00:00 |
| 291 |  | Informe de conclusiones de la fase | 1h | 2010-11-07 00:00 | 2010-11-07 01:00 |  | 7.98d | start no earlier than 2010-11-07 00:00 |
| 292 |  | Plan de la iteración | 2h | 2010-11-07 00:00 | 2010-11-07 02:00 |  | 7.94d | start no earlier than 2010-11-07 00:00 |
| 293 |  | Acta de reunión con el director del proyecto | 0.5h | 2010-11-03 00:00 | 2010-11-03 00:30 |  | 12d | start no earlier than 2010-11-03 00:00 |
| 294 |  | Informe de situación de proyecto | 1h | 2010-11-06 00:00 | 2010-11-06 01:00 |  | 8.98d | start no earlier than 2010-11-06 00:00 |
| 295 |  | Presentación al director del proyecto | 2h | 2010-11-03 00:00 | 2010-11-03 02:00 |  | 11.94d | start no earlier than 2010-11-03 00:00 |
| 296 |  | Registro de actividades | 1h | 2010-11-06 00:00 | 2010-11-06 01:00 |  | 8.98d | start no earlier than 2010-11-06 00:00 |
| 297 |  | Informe de verificación de integración | 1h | 2010-11-06 00:00 | 2010-11-06 01:00 |  | 8.98d | start no earlier than 2010-11-06 00:00 |
| 298 |  | Descripción de la versión | 2h | 2010-11-06 00:00 | 2010-11-06 02:00 |  | 8.94d | start no earlier than 2010-11-06 00:00 |
| 299 |  | Informe de la línea base del proyecto | 3h | 2010-11-06 00:00 | 2010-11-06 03:00 |  | 8.9d | start no earlier than 2010-11-06 00:00 |
| 300 |  | Entrega semanal de SQA | 1.5h | 2010-11-06 05:00 | 2010-11-06 06:30 | 283, 284, 285, 286, 287, 288, 289, 293, 294, 295, 296, 297, 298, 299 | 8.81d | start no earlier than 2010-11-06 00:00 |
| 301 |  | Presentación al cliente | 0h | 2010-11-03 00:00 | 2010-11-03 00:00 |  | 12.08d | start no earlier than 2010-11-03 00:00 |
| 302 |  | Buffer de error | 1h? | 2010-11-07 00:00 | 2010-11-07 01:00 |  | 8.04d | start no earlier than 2010-11-07 00:00 |
| 303 | 4 | **Fase Implantación** | 10.92d? | 2010-11-07 04:00 | 2010-11-18 02:00 | 45 | 0d |  |
| 304 | 4.1 | **Iteración 1** | 10.92d? | 2010-11-07 04:00 | 2010-11-18 02:00 |  | 0d |  |
| 305 | 4.1.1 | **Semana 14** | 10.92d? | 2010-11-07 04:00 | 2010-11-18 02:00 |  | 0d |  |
| 306 |  | Diseño / Implementación | 1d? | 2010-11-07 04:00 | 2010-11-08 04:00 |  | 9.92d |  |
| 307 |  | Verificación | 1d? | 2010-11-07 04:00 | 2010-11-08 04:00 |  | 9.92d |  |
| 308 | 4.1.1.3 | **Gestión del Proyecto** | 2.08d | 2010-11-16 00:00 | 2010-11-18 02:00 |  | 0d |  |
| 309 |  | Evaluación de satisfacción del cliente | 2h | 2010-11-17 00:00 | 2010-11-17 02:00 |  | 1d | start no earlier than 2010-11-17 00:00 |
| 310 |  | Preparar presentación al director | 2h | 2010-11-18 00:00 | 2010-11-18 02:00 |  | 0d | start no earlier than 2010-11-18 00:00 |
| 311 |  | Preparar presentación final del proyecto | 4h | 2010-11-16 00:00 | 2010-11-16 04:00 |  | 1.92d | start no earlier than 2010-11-16 00:00 |
| 312 | 4.1.1.4 | **Gestión de la Calidad** | 0.25d? | 2010-11-07 04:00 | 2010-11-07 10:00 |  | 10.67d |  |
| 313 |  | Revisión de Documentos | 6h? | 2010-11-07 04:00 | 2010-11-07 10:00 |  | 10.67d | start no earlier than 2010-10-17 01:00 |
| 314 | 4.1.1.5 | **Gestión de la Configuración** | 3d? | 2010-11-10 00:00 | 2010-11-13 00:00 |  | 5.08d |  |
| 315 |  | Escribir las notas de la versión | 1d | 2010-11-10 00:00 | 2010-11-11 00:00 |  | 7.08d | start no earlier than 2010-11-10 00:00 |
| 316 |  | Realizar informe final de SCM | 3d? | 2010-11-10 00:00 | 2010-11-13 00:00 |  | 5.08d | finish no earlier than 2010-11-13 00:00 |
| 317 | 4.1.1.6 | **Entregables** | 3.48d | 2010-11-10 00:00 | 2010-11-13 11:30 |  | 4.6d |  |
| 318 |  | Informe final de verificación | 2h | 2010-11-13 00:00 | 2010-11-13 02:00 |  | 4.94d | start no earlier than 2010-11-13 00:00 |
| 319 |  | Reporte de pruebas | 4h | 2010-11-13 00:00 | 2010-11-13 04:00 |  | 4.85d | start no earlier than 2010-11-13 00:00 |
| 320 |  | Reporte Final de Pruebas de Aceptación | 4h | 2010-11-13 00:00 | 2010-11-13 04:00 |  | 4.85d | start no earlier than 2010-11-13 00:00 |
| 321 |  | Informe final de calidad | 8h | 2010-11-13 00:00 | 2010-11-13 08:00 |  | 4.69d | start no earlier than 2010-11-13 00:00 |
| 322 |  | Informe de revisión de SQA | 2h | 2010-11-13 00:00 | 2010-11-13 02:00 |  | 4.94d | start no earlier than 2010-11-13 00:00 |
| 323 |  | Materiales para soporte al usuario | 2h | 2010-11-13 00:00 | 2010-11-13 02:00 |  | 4.94d | start no earlier than 2010-11-13 00:00 |
| 324 |  | Acta de reunión de equipo | 1h | 2010-11-13 00:00 | 2010-11-13 01:00 |  | 4.98d | start no earlier than 2010-11-13 00:00 |
| 325 |  | Informe de conclusiones de la fase | 1h | 2010-11-13 00:00 | 2010-11-13 01:00 |  | 4.98d | start no earlier than 2010-11-13 00:00 |
| 326 |  | Informe de situación de proyecto | 1h | 2010-11-13 00:00 | 2010-11-13 01:00 |  | 4.98d | start no earlier than 2010-11-13 00:00 |
| 327 |  | Informe final de proyecto | 4h | 2010-11-13 00:00 | 2010-11-13 04:00 |  | 4.85d | start no earlier than 2010-11-13 00:00 |
| 328 |  | Lecciones Aprendidas | 0.5h | 2010-11-13 00:00 | 2010-11-13 00:30 |  | 5d | start no earlier than 2010-11-13 00:00 |
| 329 |  | Presentación de cierre de proyecto | 4h | 2010-11-13 00:00 | 2010-11-13 04:00 |  | 4.85d | start no earlier than 2010-11-13 00:00 |
| 330 |  | Registro de actividades | 1h | 2010-11-13 00:00 | 2010-11-13 01:00 |  | 4.98d | start no earlier than 2010-11-13 00:00 |
| 331 |  | Encuesta de satisfacción del cliente | 2h | 2010-11-10 00:00 | 2010-11-10 02:00 |  | 7.94d | start no earlier than 2010-11-10 00:00 |
| 332 |  | Documentación técnica | 1h | 2010-11-13 00:00 | 2010-11-13 01:00 |  | 4.98d | start no earlier than 2010-11-13 00:00 |
| 333 |  | Versión alfa del producto | 0h | 2010-11-13 00:00 | 2010-11-13 00:00 |  | 5.02d | start no earlier than 2010-11-13 00:00 |
| 334 |  | Informe final de configuración | 10h | 2010-11-13 00:00 | 2010-11-13 10:00 |  | 4.6d | start no earlier than 2010-11-13 00:00 |
| 335 |  | Notas de la versión | 3h | 2010-11-13 00:00 | 2010-11-13 03:00 |  | 4.9d | start no earlier than 2010-11-13 00:00 |
| 336 |  | Entrega semanal de SQA | 1.5h | 2010-11-13 10:00 | 2010-11-13 11:30 | 318, 319, 320, 321, 322, 323, 324, 325, 326, 327, 328, 329, 330, 331, 332, 333, 334, 335 | 4.6d |  |
| 337 |  | Presentación al cliente | 0h | 2010-11-08 00:00 | 2010-11-08 00:00 |  | 10.08d | start no earlier than 2010-11-08 00:00 |
| 338 |  | Buffer de error | 1h? | 2010-11-14 00:00 | 2010-11-14 01:00 |  | 4.04d | start no earlier than 2010-11-14 00:00 |

## Version 2 (data date 2010-10-07, saved 2010-10-25)

Last finish stays 2010-11-18. Complete tasks 169 → 161.

Changed:

| ID | Task | Start | Finish | Duration | Complete | Total float | Other |
| --- | --- | --- | --- | --- | --- | --- | --- |
| 45 | **Fase construcción** |  |  |  | 59% → 45% |  |  |
| 46 | **Iteración 1** |  | 2010-10-17 04:00 → 2010-10-17 12:00 | 14.17d? → 14.5d? | 97% → 80% | 18.29d → 14.87d |  |
| 96 | **Semana 10** |  | 2010-10-17 04:00 → 2010-10-17 12:00 | 6.17d? → 6.5d? | 96% → 74% | 18.29d → 14.87d |  |
| 126 | **Gestión de la Configuración** |  | 2010-10-16 00:00 A → 2010-10-17 12:00 (+1d) | 3d? → 4.5d? | 100% → 67% | none → 14.87d |  |
| 129 | Escribir notas de la versión |  | 2010-10-16 00:00 A → 2010-10-17 12:00 (+1d) | 3d? → 4.5d? | 100% → 22% | none → 14.87d | resources Vicente Acosta; Juan Ghiringhelli, Ignacio Infante → Vicente Acosta; Juan Ghiringhelli; Ignacio Infante |
| 154 | **Iteración 2** |  |  |  | 50% → 35% |  |  |
| 155 | **Semana 11** |  | 2010-10-24 01:00 → 2010-10-25 00:00 (+1d) | 6.88d? → 7.83d? | 96% → 64% | 22.04d → 21.08d |  |
| 156 | **Diseño / Implementación** |  | 2010-10-24 00:00 → 2010-10-25 00:00 (+1d) | 6.83d? → 7.83d? | 91% → 53% | 22.08d → 21.08d |  |
| 166 | Adaptación de servicios de Azure a WP7 | 2010-10-18 00:00 A → 2010-10-17 12:00 (-1d) | 2010-10-23 00:00 A → 2010-10-25 00:00 (+2d) | 5d? → 7.5d? | 100% → 0% | none → 21.08d | resources Ignacio Infante, Leticia Vilariño → Ignacio Infante; Leticia Vilariño |
| 167 | **Verificación** |  | 2010-10-21 00:00 A → 2010-10-21 00:00 |  | 100% → 67% | none → 25.08d |  |
| 173 | **Corregir casos de uso** | 2010-10-20 00:00 A → 2010-10-20 00:00 | 2010-10-21 00:00 A → 2010-10-21 00:00 |  | 100% → 0% | none → 25.08d |  |
| 174 | Corregir multi usuario | 2010-10-20 00:00 A → 2010-10-20 00:00 | 2010-10-21 00:00 A → 2010-10-21 00:00 |  | 100% → 0% | none → 25.08d | resources Vicente Acosta, Federico Andrade → Vicente Acosta; Federico Andrade |
| 175 | Corregir GUI | 2010-10-20 00:00 A → 2010-10-20 00:00 | 2010-10-21 00:00 A → 2010-10-21 00:00 |  | 100% → 0% | none → 25.08d | resources Leticia Vilariño, José Cordero → Leticia Vilariño; José Cordero |
| 176 | Corregir sospechosos FB | 2010-10-20 00:00 A → 2010-10-20 00:00 | 2010-10-21 00:00 A → 2010-10-21 00:00 |  | 100% → 0% | none → 25.08d | resources Vicente Acosta, Federico Andrade → Vicente Acosta; Federico Andrade |
| 177 | Corregir errores encontrados en ciclos de vida | 2010-10-20 00:00 A → 2010-10-20 00:00 | 2010-10-21 00:00 A → 2010-10-21 00:00 |  | 100% → 0% | none → 25.08d | resources Diego Ricca, Martín Taruselli → Diego Ricca; Martín Taruselli |
| 188 | **Gestión de la Configuración** |  | 2010-10-24 00:00 A → 2010-10-24 00:00 |  | 100% → 73% | none → 22.08d |  |
| 190 | Describir la versión |  | 2010-10-23 00:00 A → 2010-10-23 00:00 |  | 100% → 33% | none → 0d | resources Vicente Acosta; Juan Ghiringhelli, Ignacio Infante → Vicente Acosta; Juan Ghiringhelli; Ignacio Infante |
| 192 | Escribir notas de la versión |  | 2010-10-24 00:00 A → 2010-10-24 00:00 |  | 100% → 33% | none → 22.08d | resources Vicente Acosta; Juan Ghiringhelli, Ignacio Infante → Vicente Acosta; Juan Ghiringhelli; Ignacio Infante |
| 219 | Tiempo substraído por actividad del jugador |  |  |  |  |  | was named Tiempo substraido por actividad del jugador |
| 239 | Describir la versión |  | 2010-10-30 00:00 → 2010-10-29 00:00 (-1d) | 3d? → 2d? |  | 15.08d → 16.42d | resources Vicente Acosta; Juan Ghiringhelli, Ignacio Infante → Vicente Acosta; Juan Ghiringhelli; Ignacio Infante |
| 240 | Escribir notas de la versión | 2010-10-30 00:00 → 2010-10-30 08:00 |  | 1d? → 0.67d? |  |  | resources Vicente Acosta; Juan Ghiringhelli, Ignacio Infante → Vicente Acosta; Juan Ghiringhelli; Ignacio Infante |
| 281 | Escribir notas de la versión |  | 2010-11-06 00:00 → 2010-11-05 00:00 (-1d) | 3d? → 2d? |  | 9.08d → 10.08d | resources Vicente Acosta; Juan Ghiringhelli, Ignacio Infante → Vicente Acosta; Juan Ghiringhelli; Ignacio Infante |
