# Proyect1

How a schedule from MS Project changed from version to version. A marks actual dates.

## Version 1 (data date 2010-10-07, saved 2010-10-08)

| ID | WBS | Task | Duration | Start | Finish | Predecessors | Total float | Constraint |
| --- | --- | --- | --- | --- | --- | --- | --- | --- |
| 1 | 1 | **Fase construcción** | 33.67d? | 2010-10-04 09:00 | 2010-11-07 01:00 |  | 6d |  |
| 2 | 1.1 | **Iteración 1** | 12.67d? | 2010-10-04 09:00 | 2010-10-17 01:00 |  | 25.92d |  |
| 3 | 1.1.1 | **Semana 09** | 5.62d? | 2010-10-04 09:00 | 2010-10-10 00:00 |  | 31.96d |  |
| 4 |  | Reunión con el Director | 1h? | 2010-10-05 00:00 | 2010-10-05 01:00 |  | 36.92d | start no earlier than 2010-10-05 00:00 |
| 5 |  | Diseño / Implementación | 1d? | 2010-10-04 09:00 | 2010-10-05 09:00 |  | 36.58d |  |
| 6 |  | Verificación | 1d? | 2010-10-04 09:00 | 2010-10-05 09:00 |  | 36.58d |  |
| 7 |  | Gestión del Proyecto | 1d? | 2010-10-04 09:00 | 2010-10-05 09:00 |  | 36.58d |  |
| 8 | 1.1.1.5 | **Gestión de la Calidad** | 0.52d? | 2010-10-04 09:00 | 2010-10-04 21:30 |  | 37.06d |  |
| 9 | 1.1.1.5.1 | **RTF Planificación del Proyecto** | 0.19d? | 2010-10-04 09:00 | 2010-10-04 13:30 |  | 37.06d |  |
| 10 |  | Estudio del Project del Proyecto | 1h? | 2010-10-04 09:00 | 2010-10-04 10:00 |  | 37.06d |  |
| 11 |  | Revisión Técnica | 1.5h? | 2010-10-04 10:00 | 2010-10-04 11:30 | 10 | 37.06d |  |
| 12 |  | Conclusiones, proponer acciones correctivas | 1h? | 2010-10-04 11:30 | 2010-10-04 12:30 | 11 | 37.06d |  |
| 13 |  | Seguimiento de la RTF | 1h? | 2010-10-04 12:30 | 2010-10-04 13:30 | 12 | 37.4d |  |
| 14 |  | Revisión de Documentos | 6h? | 2010-10-04 15:30 | 2010-10-04 21:30 | 16 | 37.06d |  |
| 15 |  | Gestión de la Configuración | 1d? | 2010-10-04 09:00 | 2010-10-05 09:00 |  | 36.58d |  |
| 16 | 1.1.1.7 | **Entregables** | 0.27d? | 2010-10-04 09:00 | 2010-10-04 15:30 |  | 37.06d |  |
| 17 |  | Documento de evaluación y ajuste del plan de VyV | 2h? | 2010-10-04 09:00 | 2010-10-04 11:00 |  | 37.19d |  |
| 18 |  | Evaluación de la verificación | 2h? | 2010-10-04 09:00 | 2010-10-04 11:00 |  | 37.19d |  |
| 19 |  | Informe de verificación de documento | 2h? | 2010-10-04 09:00 | 2010-10-04 11:00 |  | 37.19d |  |
| 20 |  | Reporte de pruebas | 4h? | 2010-10-04 09:00 | 2010-10-04 13:00 |  | 37.1d |  |
| 21 |  | Documento de evaluación y ajuste del plan de calidad | 2h? | 2010-10-04 09:00 | 2010-10-04 11:00 |  | 37.19d |  |
| 22 |  | Informe de revisión de SQA | 2h? | 2010-10-04 09:00 | 2010-10-04 11:00 |  | 37.19d |  |
| 23 |  | Informe de RTF | 1.5h? | 2010-10-04 12:30 | 2010-10-04 14:00 | 12 | 37.06d |  |
| 24 |  | Materiales para soporte al usuario | 1h? | 2010-10-04 09:00 | 2010-10-04 10:00 |  | 37.23d |  |
| 25 |  | Acta de reunión con el director del proyecto | 1h? | 2010-10-04 09:00 | 2010-10-04 10:00 |  | 37.23d |  |
| 26 |  | Documento de riesgos | 1h? | 2010-10-04 09:00 | 2010-10-04 10:00 |  | 37.23d |  |
| 27 |  | Informe de situación de proyecto | 1h? | 2010-10-04 09:00 | 2010-10-04 10:00 |  | 37.23d |  |
| 28 |  | Presentación al director del proyecto | 1h? | 2010-10-04 09:00 | 2010-10-04 10:00 |  | 37.23d |  |
| 29 |  | Registro de actividades | 1h? | 2010-10-04 09:00 | 2010-10-04 10:00 |  | 37.23d |  |
| 30 |  | Plan de implantación | 1h? | 2010-10-04 09:00 | 2010-10-04 10:00 |  | 37.23d |  |
| 31 |  | Modelo de diseño | 1h? | 2010-10-04 09:00 | 2010-10-04 10:00 |  | 37.23d |  |
| 32 |  | Plan de desarrollo | 1h? | 2010-10-04 09:00 | 2010-10-04 10:00 |  | 37.23d |  |
| 33 |  | Informe de integración | 1h? | 2010-10-04 09:00 | 2010-10-04 10:00 |  | 37.23d |  |
| 34 |  | Plan de integración de la iteración | 1h? | 2010-10-04 09:00 | 2010-10-04 10:00 |  | 37.23d |  |
| 35 |  | Informe de verificación unitaria | 0.5h? | 2010-10-04 09:00 | 2010-10-04 09:30 |  | 37.25d |  |
| 36 |  | Revision por Pares | 1h? | 2010-10-04 09:00 | 2010-10-04 10:00 |  | 37.23d |  |
| 37 |  | Descripción de la versión | 1h? | 2010-10-04 09:00 | 2010-10-04 10:00 |  | 37.23d |  |
| 38 |  | Informe de la línea base del proyecto | 1h? | 2010-10-04 09:00 | 2010-10-04 10:00 |  | 37.23d |  |
| 39 |  | Entrega semanal de SQA | 1.5h? | 2010-10-04 14:00 | 2010-10-04 15:30 | 17, 18, 19, 20, 21, 22, 23, 24, 25, 26, 27, 28, 29, 30, 31, 32, 33, 34, 35, 36, 37, 38 | 37.06d |  |
| 40 |  | Buffer de error | 1h? | 2010-10-09 23:00 | 2010-10-10 00:00 |  | 31.96d | finish no earlier than 2010-10-10 00:00 |
| 41 | 1.1.2 | **Semana 10** | 7.04d? | 2010-10-10 00:00 | 2010-10-17 01:00 | 3 | 25.92d |  |
| 42 |  | Reunión con el Director | 1h? | 2010-10-12 00:00 | 2010-10-12 01:00 |  | 30.92d | start no earlier than 2010-10-12 00:00 |
| 43 |  | Reunión con el Cliente | 1h? | 2010-10-13 00:00 | 2010-10-13 01:00 |  | 29.92d | start no earlier than 2010-10-13 00:00 |
| 44 |  | Reunión de Integración | 0d | 2010-10-10 00:00 | 2010-10-10 00:00 |  | 32.96d |  |
| 45 |  | Reunión Quincenal | 2h? | 2010-10-10 00:00 | 2010-10-10 02:00 |  | 32.88d |  |
| 46 |  | Diseño / Implementación | 1d? | 2010-10-10 00:00 | 2010-10-11 00:00 |  | 31.96d |  |
| 47 |  | Verificación | 1d? | 2010-10-10 00:00 | 2010-10-11 00:00 |  | 31.96d |  |
| 48 |  | Gestión del Proyecto | 1d? | 2010-10-10 00:00 | 2010-10-11 00:00 |  | 31.96d |  |
| 49 | 1.1.2.8 | **Gestión de la Calidad** | 0.25d? | 2010-10-10 02:00 | 2010-10-10 08:00 |  | 32.62d |  |
| 50 |  | Revisión de Documentos | 6h? | 2010-10-10 02:00 | 2010-10-10 08:00 | 52 | 32.62d |  |
| 51 |  | Gestión de la Configuración | 1d? | 2010-10-10 00:00 | 2010-10-11 00:00 |  | 31.96d |  |
| 52 | 1.1.2.10 | **Entregables** | 0.08d? | 2010-10-10 00:00 | 2010-10-10 02:00 |  | 32.62d |  |
| 53 |  | Modelo de casos de prueba | 1h? | 2010-10-10 00:00 | 2010-10-10 01:00 |  | 32.62d |  |
| 54 |  | Plan de verificación de la iteración | 1h? | 2010-10-10 00:00 | 2010-10-10 01:00 |  | 32.62d |  |
| 55 |  | Materiales para capacitación | 1h? | 2010-10-10 00:00 | 2010-10-10 01:00 |  | 32.62d |  |
| 56 |  | Materiales para soporte al usuario | 1h? | 2010-10-10 00:00 | 2010-10-10 01:00 |  | 32.62d |  |
| 57 |  | Acta de reunión de equipo | 1h? | 2010-10-10 00:00 | 2010-10-10 01:00 |  | 32.62d |  |
| 58 |  | Documento de riesgos | 1h? | 2010-10-10 00:00 | 2010-10-10 01:00 |  | 32.62d |  |
| 59 |  | Documento de validación con el cliente | 1h? | 2010-10-10 00:00 | 2010-10-10 01:00 |  | 32.62d |  |
| 60 |  | Informe de situación de proyecto | 1h? | 2010-10-10 00:00 | 2010-10-10 01:00 |  | 32.62d |  |
| 61 |  | Lecciones Aprendidas | 1h? | 2010-10-10 00:00 | 2010-10-10 01:00 |  | 32.62d |  |
| 62 |  | Plan de la iteración | 1h? | 2010-10-10 00:00 | 2010-10-10 01:00 |  | 32.62d |  |
| 63 |  | Registro de actividades | 1h? | 2010-10-10 00:00 | 2010-10-10 01:00 |  | 32.62d |  |
| 64 |  | Modelo de Datos | 1h? | 2010-10-10 00:00 | 2010-10-10 01:00 |  | 32.62d |  |
| 65 |  | Modelo de diseño | 1h? | 2010-10-10 00:00 | 2010-10-10 01:00 |  | 32.62d |  |
| 66 |  | Modelo de Implementación | 1h? | 2010-10-10 00:00 | 2010-10-10 01:00 |  | 32.62d |  |
| 67 |  | Plan de desarrollo | 1h? | 2010-10-10 00:00 | 2010-10-10 01:00 |  | 32.62d |  |
| 68 |  | Versión beta del producto | 1h? | 2010-10-10 00:00 | 2010-10-10 01:00 |  | 32.62d |  |
| 69 |  | Ejecutable de la Iteración | 1h? | 2010-10-10 00:00 | 2010-10-10 01:00 |  | 32.62d |  |
| 70 |  | Informe de integración | 1h? | 2010-10-10 00:00 | 2010-10-10 01:00 |  | 32.62d |  |

| ID | WBS | Task | Duration | Start | Finish | Predecessors | Total float | Constraint |
| --- | --- | --- | --- | --- | --- | --- | --- | --- |
| 71 |  | Plan de integración de la iteración | 1h? | 2010-10-10 00:00 | 2010-10-10 01:00 |  | 32.62d |  |
| 72 |  | Gestión de cambios | 1h? | 2010-10-10 00:00 | 2010-10-10 01:00 |  | 32.62d |  |
| 73 |  | Notas de la versión | 1h? | 2010-10-10 00:00 | 2010-10-10 01:00 |  | 32.62d |  |
| 74 |  | Registro de versiones | 1h? | 2010-10-10 00:00 | 2010-10-10 01:00 |  | 32.62d |  |
| 75 |  | Entrega semanal de SQA | 1h? | 2010-10-10 01:00 | 2010-10-10 02:00 | 53, 54, 55, 56, 57, 58, 59, 60, 61, 62, 63, 64, 65, 66, 67, 68, 69, 70, 71, 72, 73, 74 | 32.62d |  |
| 76 |  | Buffer de error | 1h? | 2010-10-17 00:00 | 2010-10-17 01:00 |  | 25.92d | start no earlier than 2010-10-17 00:00 |
| 77 | 1.2 | **Iteración 2** | 21d? | 2010-10-17 01:00 | 2010-11-07 01:00 | 2 | 6d |  |
| 78 | 1.2.1 | **Semana 11** | 7d? | 2010-10-17 01:00 | 2010-10-24 01:00 | 41 | 20d |  |
| 79 |  | Reunión con el Cliente | 2h? | 2010-10-18 00:00 | 2010-10-18 02:00 |  | 25.96d | start no earlier than 2010-10-18 00:00 |
| 80 |  | Reunión con el Director | 1h? | 2010-10-19 00:00 | 2010-10-19 01:00 |  | 25d | start no earlier than 2010-10-19 00:00 |
| 81 |  | Diseño / Implementación | 1d? | 2010-10-17 01:00 | 2010-10-18 01:00 |  | 26d |  |
| 82 |  | Verificación | 1d? | 2010-10-17 01:00 | 2010-10-18 01:00 |  | 26d |  |
| 83 |  | Gestión del Proyecto | 1d? | 2010-10-17 01:00 | 2010-10-18 01:00 |  | 26d |  |
| 84 | 1.2.1.6 | **Gestión de la Calidad** | 0.21d? | 2010-10-17 01:00 | 2010-10-17 06:00 |  | 26.75d |  |
| 85 | 1.2.1.6.1 | **RTF del Código** | 0.21d? | 2010-10-17 01:00 | 2010-10-17 06:00 |  | 26.75d |  |
| 86 |  | Estudio del Project del Proyecto | 1h? | 2010-10-17 01:00 | 2010-10-17 02:00 |  | 26.75d |  |
| 87 |  | Revisión Técnica | 2h? | 2010-10-17 02:00 | 2010-10-17 04:00 | 86 | 26.75d |  |
| 88 |  | Conclusiones, proponer acciones correctivas | 1h? | 2010-10-17 04:00 | 2010-10-17 05:00 | 87 | 26.75d |  |
| 89 |  | Seguimiento de la RTF | 1h? | 2010-10-17 05:00 | 2010-10-17 06:00 | 88 | 26.79d |  |
| 90 |  | Revisión de Documentos | 6h? | 2010-10-17 01:00 | 2010-10-17 07:00 |  | 26.75d |  |
| 91 |  | Gestión de la Configuración | 1d? | 2010-10-17 01:00 | 2010-10-18 01:00 |  | 26d |  |
| 92 | 1.2.1.9 | **Entregables** | 0.25d? | 2010-10-17 01:00 | 2010-10-17 07:00 |  | 26.75d |  |
| 93 |  | Documento de evaluación y ajuste del plan de VyV | 1h? | 2010-10-17 01:00 | 2010-10-17 02:00 |  | 26.92d |  |
| 94 |  | Evaluación de la verificación | 1h? | 2010-10-17 01:00 | 2010-10-17 02:00 |  | 26.92d |  |
| 95 |  | Informe de verificación de documento (Documentación técnica) | 1h? | 2010-10-17 01:00 | 2010-10-17 02:00 |  | 26.92d |  |
| 96 |  | Reporte de pruebas | 1h? | 2010-10-17 01:00 | 2010-10-17 02:00 |  | 26.92d |  |
| 97 |  | Documento de evaluación y ajuste del plan de calidad | 1h? | 2010-10-17 01:00 | 2010-10-17 02:00 |  | 26.92d |  |
| 98 |  | Informe de revisión de SQA | 1h? | 2010-10-17 01:00 | 2010-10-17 02:00 |  | 26.92d |  |
| 99 |  | Informe de RTF | 1h? | 2010-10-17 05:00 | 2010-10-17 06:00 | 88 | 26.75d |  |
| 100 |  | Materiales para capacitación | 1h? | 2010-10-17 01:00 | 2010-10-17 02:00 |  | 26.92d |  |
| 101 |  | Materiales para soporte al usuario | 1h? | 2010-10-17 01:00 | 2010-10-17 02:00 |  | 26.92d |  |
| 102 |  | Documento de Evaluacion y Ajustes al Plan del Proyecto | 1h? | 2010-10-17 01:00 | 2010-10-17 02:00 |  | 26.92d |  |
| 103 |  | Informe de situación de proyecto | 1h? | 2010-10-17 01:00 | 2010-10-17 02:00 |  | 26.92d |  |
| 104 |  | Registro de actividades | 1h? | 2010-10-17 01:00 | 2010-10-17 02:00 |  | 26.92d |  |
| 105 |  | Documentación técnica | 1h? | 2010-10-17 01:00 | 2010-10-17 02:00 |  | 26.92d |  |
| 106 |  | Plan de desarrollo | 1h? | 2010-10-17 01:00 | 2010-10-17 02:00 |  | 26.92d |  |
| 107 |  | Ejecutable de la Iteración | 1h? | 2010-10-17 01:00 | 2010-10-17 02:00 |  | 26.92d |  |
| 108 |  | Informe de verificación unitaria | 0.5h? | 2010-10-17 01:00 | 2010-10-17 01:30 |  | 26.94d |  |
| 109 |  | Revision por Pares | 1h? | 2010-10-17 01:00 | 2010-10-17 02:00 |  | 26.92d |  |
| 110 |  | Descripción de la versión | 1h? | 2010-10-17 01:00 | 2010-10-17 02:00 |  | 26.92d |  |
| 111 |  | Informe de la línea base del proyecto | 1h? | 2010-10-17 01:00 | 2010-10-17 02:00 |  | 26.92d |  |
| 112 |  | Entrega semanal de SQA | 1h? | 2010-10-17 06:00 | 2010-10-17 07:00 | 93, 94, 95, 96, 97, 98, 99, 100, 101, 102, 103, 104, 105, 106, 107, 108, 109, 110, 111 | 26.75d |  |
| 113 |  | Buffer de error | 1h? | 2010-10-24 00:00 | 2010-10-24 01:00 |  | 18.96d | start no earlier than 2010-10-24 00:00 |
| 114 | 1.2.2 | **Semana 12** | 7d? | 2010-10-24 01:00 | 2010-10-31 01:00 | 113 | 13d |  |
| 115 |  | Reunión con el Director | 1h? | 2010-10-26 00:00 | 2010-10-26 01:00 |  | 18d | start no earlier than 2010-10-26 00:00 |
| 116 |  | Reunión Quincenal | 2h? | 2010-10-24 01:00 | 2010-10-24 03:00 |  | 19.92d |  |
| 117 |  | Diseño / Implementación | 1d? | 2010-10-24 01:00 | 2010-10-25 01:00 |  | 19d |  |
| 118 |  | Verificación | 1d? | 2010-10-24 01:00 | 2010-10-25 01:00 |  | 19d |  |
| 119 |  | Gestión del Proyecto | 1d? | 2010-10-24 01:00 | 2010-10-25 01:00 |  | 19d |  |
| 120 | 1.2.2.6 | **Gestión de la Calidad** | 0.25d? | 2010-10-24 01:00 | 2010-10-24 07:00 |  | 19.75d |  |
| 121 | 1.2.2.6.1 | **RTF Planificación del Proyecto** | 0.08d? | 2010-10-24 01:00 | 2010-10-24 03:00 |  | 19.88d |  |
| 122 |  | Estudio del Project del Proyecto | 1h? | 2010-10-24 01:00 | 2010-10-24 02:00 |  | 19.96d |  |
| 123 |  | Revisión Técnica | 2h? | 2010-10-24 01:00 | 2010-10-24 03:00 |  | 19.92d |  |
| 124 |  | Conclusiones, proponer acciones correctivas | 1h? | 2010-10-24 01:00 | 2010-10-24 02:00 |  | 19.88d |  |
| 125 |  | Seguimiento de la RTF | 1h? | 2010-10-24 01:00 | 2010-10-24 02:00 |  | 19.96d |  |
| 126 |  | Revisión de Documentos | 6h? | 2010-10-24 01:00 | 2010-10-24 07:00 |  | 19.75d | start no earlier than 2010-10-17 01:00 |
| 127 |  | Gestión de la Configuración | 1d? | 2010-10-24 01:00 | 2010-10-25 01:00 |  | 19d |  |
| 128 | 1.2.2.8 | **Entregables** | 0.12d? | 2010-10-24 01:00 | 2010-10-24 04:00 |  | 19.88d |  |
| 129 |  | Evaluación de la verificación | 1h? | 2010-10-24 01:00 | 2010-10-24 02:00 |  | 19.92d |  |
| 130 |  | Modelo de casos de prueba | 1h? | 2010-10-24 01:00 | 2010-10-24 02:00 |  | 19.92d |  |
| 131 |  | Plan de verificación de la iteración | 1h? | 2010-10-24 01:00 | 2010-10-24 02:00 |  | 19.92d |  |
| 132 |  | Reporte de pruebas | 1h? | 2010-10-24 01:00 | 2010-10-24 02:00 |  | 19.92d |  |
| 133 |  | Informe de RTF | 1h? | 2010-10-24 02:00 | 2010-10-24 03:00 | 124 | 19.88d |  |
| 134 |  | Materiales para capacitación | 1h? | 2010-10-24 01:00 | 2010-10-24 02:00 |  | 19.92d |  |
| 135 |  | Materiales para soporte al usuario | 1h? | 2010-10-24 01:00 | 2010-10-24 02:00 |  | 19.92d |  |
| 136 |  | Acta de reunión de equipo | 1h? | 2010-10-24 01:00 | 2010-10-24 02:00 |  | 19.92d |  |
| 137 |  | Informe de conclusiones de la fase | 1h? | 2010-10-24 01:00 | 2010-10-24 02:00 |  | 19.92d |  |
| 138 |  | Informe de situación de proyecto | 1h? | 2010-10-24 01:00 | 2010-10-24 02:00 |  | 19.92d |  |
| 139 |  | Lecciones Aprendidas | 1h? | 2010-10-24 01:00 | 2010-10-24 02:00 |  | 19.92d |  |
| 140 |  | Plan de la iteración | 1h? | 2010-10-24 01:00 | 2010-10-24 02:00 |  | 19.92d |  |

| ID | WBS | Task | Duration | Start | Finish | Predecessors | Total float | Constraint |
| --- | --- | --- | --- | --- | --- | --- | --- | --- |
| 141 |  | Presentación del sistema | 1h? | 2010-10-24 01:00 | 2010-10-24 02:00 |  | 19.92d |  |
| 142 |  | Registro de actividades | 1h? | 2010-10-24 01:00 | 2010-10-24 02:00 |  | 19.92d |  |
| 143 |  | Plan de implantación | 1h? | 2010-10-24 01:00 | 2010-10-24 02:00 |  | 19.92d |  |
| 144 |  | Documentación técnica | 1h? | 2010-10-24 01:00 | 2010-10-24 02:00 |  | 19.92d |  |
| 145 |  | Plan de desarrollo | 1h? | 2010-10-24 01:00 | 2010-10-24 02:00 |  | 19.92d |  |
| 146 |  | Versión beta del producto | 1h? | 2010-10-24 01:00 | 2010-10-24 02:00 |  | 19.92d |  |
| 147 |  | Informe de integración | 1h? | 2010-10-24 01:00 | 2010-10-24 02:00 |  | 19.92d |  |
| 148 |  | Descripción de la versión | 1h? | 2010-10-24 01:00 | 2010-10-24 02:00 |  | 19.92d |  |
| 149 |  | Gestión de cambios | 1h? | 2010-10-24 01:00 | 2010-10-24 02:00 |  | 19.92d |  |
| 150 |  | Notas de la versión | 1h? | 2010-10-24 01:00 | 2010-10-24 02:00 |  | 19.92d |  |
| 151 |  | Registro de versiones | 1h? | 2010-10-24 01:00 | 2010-10-24 02:00 |  | 19.92d |  |
| 152 |  | Entrega semanal de SQA | 1h? | 2010-10-24 03:00 | 2010-10-24 04:00 | 129, 130, 131, 132, 133, 134, 135, 136, 137, 138, 139, 140, 141, 142, 143, 144, 145, 146, 147, 148, 149, 150, 151 | 19.88d |  |
| 153 |  | Buffer de error | 1h? | 2010-10-31 00:00 | 2010-10-31 01:00 |  | 12d | start no earlier than 2010-10-31 00:00 |
| 154 | 1.2.3 | **Semana 13** | 7d? | 2010-10-31 01:00 | 2010-11-07 01:00 | 153 | 6d |  |
| 155 |  | Reunión con el Cliente | 0.83h? | 2010-11-01 00:00 | 2010-11-01 00:50 |  | 12.01d | start no earlier than 2010-11-01 00:00 |
| 156 |  | Reunión con el Director | 1h? | 2010-11-02 00:00 | 2010-11-02 01:00 |  | 11d | start no earlier than 2010-11-02 00:00 |
| 157 |  | Diseño / Implementación | 1d? | 2010-10-31 01:00 | 2010-11-01 01:00 |  | 12d |  |
| 158 |  | Verificación | 1d? | 2010-10-31 01:00 | 2010-11-01 01:00 |  | 12d |  |
| 159 |  | Gestión del Proyecto | 1d? | 2010-10-31 01:00 | 2010-11-01 01:00 |  | 12d |  |
| 160 | 1.2.3.6 | **Gestión de la Calidad** | 0.25d? | 2010-10-31 01:00 | 2010-10-31 07:00 |  | 12.75d |  |
| 161 |  | Revisión de Documentos | 6h? | 2010-10-31 01:00 | 2010-10-31 07:00 |  | 12.75d | start no earlier than 2010-10-17 01:00 |
| 162 |  | Gestión de la Configuración | 1d? | 2010-10-31 01:00 | 2010-11-01 01:00 |  | 12d |  |
| 163 | 1.2.3.8 | **Entregables** | 0.08d? | 2010-10-31 01:00 | 2010-10-31 03:00 |  | 12.92d |  |
| 164 |  | Evaluación de la verificación | 1h? | 2010-10-31 01:00 | 2010-10-31 02:00 |  | 12.92d |  |
| 165 |  | Informe de verificación del sistema | 1h? | 2010-10-31 01:00 | 2010-10-31 02:00 |  | 12.92d |  |
| 166 |  | Reporte de pruebas | 1h? | 2010-10-31 01:00 | 2010-10-31 02:00 |  | 12.92d |  |
| 167 |  | Reporte Final de Pruebas de Aceptacion | 1h? | 2010-10-31 01:00 | 2010-10-31 02:00 |  | 12.92d |  |
| 168 |  | Informe de revisión de SQA | 1h? | 2010-10-31 01:00 | 2010-10-31 02:00 |  | 12.92d |  |
| 169 |  | Materiales para capacitación | 1h? | 2010-10-31 01:00 | 2010-10-31 02:00 |  | 12.92d |  |
| 170 |  | Materiales para soporte al usuario | 1h? | 2010-10-31 01:00 | 2010-10-31 02:00 |  | 12.92d |  |
| 171 |  | Acta de reunión con el director del proyecto | 1h? | 2010-10-31 01:00 | 2010-10-31 02:00 |  | 12.92d |  |
| 172 |  | Informe de situación de proyecto | 1h? | 2010-10-31 01:00 | 2010-10-31 02:00 |  | 12.92d |  |
| 173 |  | Presentación al director del proyecto | 1h? | 2010-10-31 01:00 | 2010-10-31 02:00 |  | 12.92d |  |
| 174 |  | Registro de actividades | 1h? | 2010-10-31 01:00 | 2010-10-31 02:00 |  | 12.92d |  |
| 175 |  | Plan de implantación | 1h? | 2010-10-31 01:00 | 2010-10-31 02:00 |  | 12.92d |  |
| 176 |  | Versión beta del producto | 1h? | 2010-10-31 01:00 | 2010-10-31 02:00 |  | 12.92d |  |
| 177 |  | Informe de verificación de integración | 1h? | 2010-10-31 01:00 | 2010-10-31 02:00 |  | 12.92d |  |
| 178 |  | Revision por Pares | 1h? | 2010-10-31 01:00 | 2010-10-31 02:00 |  | 12.92d |  |
| 179 |  | Descripción de la versión | 1h? | 2010-10-31 01:00 | 2010-10-31 02:00 |  | 12.92d |  |
| 180 |  | Informe de la línea base del proyecto | 1h? | 2010-10-31 01:00 | 2010-10-31 02:00 |  | 12.92d |  |
| 181 |  | Entrega semanal de SQA | 1h? | 2010-10-31 02:00 | 2010-10-31 03:00 | 164, 165, 166, 167, 168, 169, 170, 171, 172, 173, 174, 175, 176, 177, 178, 179, 180 | 12.92d |  |
| 182 |  | Buffer de error | 1h? | 2010-11-07 00:00 | 2010-11-07 01:00 |  | 6d | start no earlier than 2010-11-07 00:00 |
| 183 | 2 | **Fase Implantación** | 7d? | 2010-11-07 01:00 | 2010-11-14 01:00 | 1 | 0d |  |
| 184 | 2.1 | **Iteración 1** | 7d? | 2010-11-07 01:00 | 2010-11-14 01:00 |  | 0d |  |
| 185 | 2.1.1 | **Semana 14** | 7d? | 2010-11-07 01:00 | 2010-11-14 01:00 |  | 0d |  |
| 186 |  | Reunión con el Cliente | 1h? | 2010-11-08 00:00 | 2010-11-08 01:00 |  | 5.92d | start no earlier than 2010-11-08 00:00 |
| 187 |  | Reunión con el Director | 1h? | 2010-11-09 00:00 | 2010-11-09 01:00 |  | 4.92d | start no earlier than 2010-11-09 00:00 |
| 188 |  | Reunión Quincenal | 2h? | 2010-11-09 01:00 | 2010-11-09 03:00 | 186, 187 | 4.92d |  |
| 189 |  | Diseño / Implementación | 1d? | 2010-11-07 01:00 | 2010-11-08 01:00 |  | 6d |  |
| 190 |  | Verificación | 1d? | 2010-11-07 01:00 | 2010-11-08 01:00 |  | 6d |  |
| 191 |  | Gestión del Proyecto | 1d? | 2010-11-07 01:00 | 2010-11-08 01:00 |  | 6d |  |
| 192 | 2.1.1.7 | **Gestión de la Calidad** | 0.25d? | 2010-11-07 01:00 | 2010-11-07 07:00 |  | 6.75d |  |
| 193 |  | Revisión de Documentos | 6h? | 2010-11-07 01:00 | 2010-11-07 07:00 |  | 6.75d | start no earlier than 2010-10-17 01:00 |
| 194 |  | Gestión de la Configuración | 1d? | 2010-11-07 01:00 | 2010-11-08 01:00 |  | 6d |  |
| 195 | 2.1.1.9 | **Entregables** | 0.08d? | 2010-11-07 01:00 | 2010-11-07 03:00 |  | 6.92d |  |
| 196 |  | Informe final de verificación | 1h? | 2010-11-07 01:00 | 2010-11-07 02:00 |  | 6.92d |  |
| 197 |  | Reporte de pruebas | 1h? | 2010-11-07 01:00 | 2010-11-07 02:00 |  | 6.92d |  |
| 198 |  | Reporte Final de Pruebas de Aceptacion | 1h? | 2010-11-07 01:00 | 2010-11-07 02:00 |  | 6.92d |  |
| 199 |  | Infome final de calidad | 1h? | 2010-11-07 01:00 | 2010-11-07 02:00 |  | 6.92d |  |
| 200 |  | Informe de revisión de SQA | 1h? | 2010-11-07 01:00 | 2010-11-07 02:00 |  | 6.92d |  |
| 201 |  | Materiales para soporte al usuario | 1h? | 2010-11-07 01:00 | 2010-11-07 02:00 |  | 6.92d |  |
| 202 |  | Acta de reunión de equipo | 1h? | 2010-11-07 01:00 | 2010-11-07 02:00 |  | 6.92d |  |
| 203 |  | Informe de conclusiones de la fase | 1h? | 2010-11-07 01:00 | 2010-11-07 02:00 |  | 6.92d |  |
| 204 |  | Informe de situación de proyecto | 1h? | 2010-11-07 01:00 | 2010-11-07 02:00 |  | 6.92d |  |
| 205 |  | Informe final de proyecto | 1h? | 2010-11-07 01:00 | 2010-11-07 02:00 |  | 6.92d |  |
| 206 |  | Lecciones Aprendidas | 1h? | 2010-11-07 01:00 | 2010-11-07 02:00 |  | 6.92d |  |
| 207 |  | Presentación de cierre de proyecto | 1h? | 2010-11-07 01:00 | 2010-11-07 02:00 |  | 6.92d |  |
| 208 |  | Registro de actividades | 1h? | 2010-11-07 01:00 | 2010-11-07 02:00 |  | 6.92d |  |
| 209 |  | Encuesta de satisfacción del cliente | 1h? | 2010-11-07 01:00 | 2010-11-07 02:00 |  | 6.92d |  |
| 210 |  | Documentación técnica | 1h? | 2010-11-07 01:00 | 2010-11-07 02:00 |  | 6.92d |  |

| ID | Task | Duration | Start | Finish | Predecessors | Total float | Constraint |
| --- | --- | --- | --- | --- | --- | --- | --- |
| 211 | Versión alfa del producto | 1h? | 2010-11-07 01:00 | 2010-11-07 02:00 |  | 6.92d |  |
| 212 | Evaluación de satisfacción del cliente | 1h? | 2010-11-07 01:00 | 2010-11-07 02:00 |  | 6.92d |  |
| 213 | Informe final de configuración | 1h? | 2010-11-07 01:00 | 2010-11-07 02:00 |  | 6.92d |  |
| 214 | Notas de la versión | 1h? | 2010-11-07 01:00 | 2010-11-07 02:00 |  | 6.92d |  |
| 215 | Entrega semanal de SQA | 1h? | 2010-11-07 02:00 | 2010-11-07 03:00 | 196, 197, 198, 199, 200, 201, 202, 203, 204, 205, 206, 207, 208, 209, 210, 211, 212, 213, 214 | 6.92d |  |
| 216 | Buffer de error | 1h? | 2010-11-14 00:00 | 2010-11-14 01:00 |  | 0d | start no earlier than 2010-11-14 00:00 |

## Version 2 (data date 2010-10-07, saved 2010-10-10)

Note of the change: Subo registro de horas, seguimiento del proyecto y plan de iteración en MS proyect con gantt para el resto del proyecto. Versiones 9.0

Last finish 2010-11-14 → 2010-11-18 (+4d). Complete tasks 0 → 33.

Added:

| ID | Task | Duration | Start | Finish | Predecessors | Constraint | Resources |
| --- | --- | --- | --- | --- | --- | --- | --- |
| 1 | **Fase inicial** | 27.42d | 2010-08-09 09:00 A | 2010-09-05 19:00 A |  |  |  |
| 2 | **Iteración 1** | 13.42d | 2010-08-09 09:00 A | 2010-08-22 19:00 A |  |  |  |
| 3 | Relevar requerimientos | 5.87w | 2010-08-09 09:00 A | 2010-08-22 19:00 A |  | start no earlier than 2010-08-09 09:00 | Analistas |
| 4 | Pautas GUI | 5.87w | 2010-08-09 09:00 A | 2010-08-22 19:00 A |  | start no earlier than 2010-08-09 09:00 | GUI |
| 5 | Modelo de dominio | 5.87w | 2010-08-09 09:00 A | 2010-08-22 19:00 A |  | finish no earlier than 2010-08-22 19:00 | Analistas |
| 6 | Definir arquitectura | 3.2w | 2010-08-16 09:00 A | 2010-08-22 19:00 A |  | finish no earlier than 2010-08-22 19:00 | Arquitecto |
| 7 | **Iteración 2** | 13.42d | 2010-08-23 09:00 A | 2010-09-05 19:00 A |  |  |  |
| 8 | Diseño prototipo | 2.93w | 2010-08-23 15:00 A | 2010-08-29 19:00 A | 3, 5, 6 | finish no earlier than 2010-08-29 19:00 | Especialistas Técnicos |
| 9 | Descripción del proyecto | 2.93w | 2010-08-23 09:00 A | 2010-08-29 13:00 A | 3, 4, 5, 6 |  | Admin |
| 11 | Prototipo funcional | 2.93w | 2010-08-30 15:00 A | 2010-09-05 19:00 A | 8 | start no earlier than 2010-08-30 15:00 | Implementadores |
| 12 | Prototipo GUI | 2.93w | 2010-08-30 15:00 A | 2010-09-05 19:00 A | 4 | start no earlier than 2010-08-30 15:00 | GUI |
| 13 | **Fase elaboración** | 29.08d? | 2010-09-06 09:00 A | 2010-10-05 11:00 |  |  |  |
| 14 | **Iteración 1** | 6.17d | 2010-09-06 09:00 A | 2010-09-12 13:00 A |  |  |  |
| 15 | Integración del prototipo | 2.93w | 2010-09-06 09:00 A | 2010-09-12 13:00 A | 8, 11 |  | Enc. Integración |
| 16 | Revisión de atributos de calidad | 2.93w | 2010-09-06 09:00 A | 2010-09-12 13:00 A | 9 | start no earlier than 2010-09-06 09:00 | SQA |
| 17 | **Iteración 2** | 15.08d? | 2010-09-20 09:00 A | 2010-10-05 11:00 |  |  |  |
| 18 | Login a Facebook desde WP7 | 0.67d? | 2010-09-20 09:00 A | 2010-09-21 19:00 A |  |  | Vicente Acosta, Leticia Vilariño |
| 19 | Integrar al proyecto módulo de Facebook | 0.33d? | 2010-09-22 09:00 A | 2010-09-22 19:00 A | 18 |  | Vicente Acosta, Federico Andrade |
| 20 | Filtrar sospechosos según datos | 2d? | 2010-09-20 09:00 A | 2010-09-27 19:00 A |  |  | Federico Andrade |
| 21 | Armar tabla para datos sospechosos | 1.33d? | 2010-09-28 09:00 A | 2010-10-01 19:00 A | 20 |  | Federico Andrade, Federico Trinidad |
| 22 | Llenar tablas para pistas ciudad | 1.33d? | 2010-09-20 09:00 A | 2010-09-23 19:00 A |  |  | Federico Trinidad |
| 23 | Parsear noticias de ciudad de Bing | 2d? | 2010-09-24 09:00 A | 2010-10-01 19:00 A | 22 |  | Federico Trinidad |
| 24 | Servicios de Azure para WP7 para workflow de juego | 1.67d? | 2010-09-20 09:00 A | 2010-09-24 19:00 A |  |  | Ignacio Infante |
| 25 | Armar iteración para usuario | 1d? | 2010-09-20 09:00 A | 2010-09-22 19:00 A |  |  | Martín Tarusello, Diego Ricca, Nacho Infante |
| 26 | Modelar estructura de las pistas | 1.25d? | 2010-09-23 09:00 A | 2010-09-28 17:00 A | 25 |  | Martín Tarusello, Diego Ricca |
| 27 | Llenar tablas con datos definitivos | 1d? | 2010-09-28 17:00 A | 2010-10-01 17:00 A | 26 |  | Martín Tarusello, Diego Ricca |
| 28 | Integrar código workflow con Gui y datos | 1d? | 2010-09-30 09:00 A | 2010-10-05 11:00 A | 18, 25, 27 | start no earlier than 2010-09-30 09:00 | Martín Tarusello, Diego Ricca, Nacho Infante [66.7%] |
| 29 | Validar arquitectura | 1d? | 2010-09-20 09:00 A | 2010-09-22 19:00 A |  |  | Marcos Sander |
| 30 | Reuniones para completar base de datos | 1.67d? | 2010-09-23 09:00 A | 2010-09-29 19:00 A | 29 | start no earlier than 2010-09-23 09:00 | Marcos Sander |
| 31 | Diseño iteración | 0.67d? | 2010-09-30 09:00 A | 2010-10-01 19:00 A | 30 | start no earlier than 2010-09-30 09:00 | Marcos Sander |
| 32 | Planificar verificación de iteración | 0.33d? | 2010-09-20 09:00 A | 2010-09-20 19:00 A |  |  | Alejandro Garcia |
| 33 | Armar casos de prueba generales | 1.67d? | 2010-09-21 09:00 A | 2010-09-27 19:00 A | 32 | start no earlier than 2010-09-21 09:00 | Alejandro Garcia |
| 34 | Diseñar casos de prueba generales | 1.33d? | 2010-09-28 09:00 A | 2010-10-01 19:00 A | 33 | start no earlier than 2010-09-28 09:00 | Alejandro Garcia |
| 35 | RTF Modelo CU | 0.67d? | 2010-09-20 09:00 A | 2010-09-21 19:00 A |  |  | Javier Madeiro |
| 36 | RTF Arquitectura | 0.67d? | 2010-09-22 09:00 A | 2010-09-23 19:00 A | 35 | start no earlier than 2010-09-22 09:00 | Javier Madeiro |
| 37 | RTF Proyecto | 0.33d? | 2010-09-24 09:00 | 2010-09-24 17:00 | 36 | start no earlier than 2010-09-24 09:00 | Javier Madeiro |
| 38 | RTF Desarrollo | 0.67d? | 2010-09-27 09:00 A | 2010-09-28 19:00 A | 37 | start no earlier than 2010-09-27 09:00 | Javier Madeiro |
| 39 | RTF SCM | 0.67d? | 2010-09-29 09:00 | 2010-09-30 01:00 | 38 | start no earlier than 2010-09-29 09:00 | Javier Madeiro |
| 40 | RTF estimaciones | 0.33d? | 2010-10-01 09:00 | 2010-10-01 17:00 | 39 | start no earlier than 2010-10-01 09:00 | Javier Madeiro |
| 41 | Animaciones Silverlight | 3.33d? | 2010-09-20 09:00 A | 2010-10-01 19:00 A |  |  | José Cordero |
| 42 | Verificar código FE-IT2 | 1.67d | 2010-09-20 09:00 A | 2010-09-22 01:00 |  |  | Juan Ghiringhelli, Javier Madeiro, Marcos Sander |
| 43 | Buffer de error | 3h | 2010-10-02 21:00 | 2010-10-03 00:00 |  | finish no earlier than 2010-10-03 00:00 |  |
| 44 | Integración | 5h | 2010-10-01 09:00 A | 2010-10-01 16:00 A |  | start no earlier than 2010-10-01 09:00 | Ignacio Infante |
| 49 | Fin pantallas principales | 10h | 2010-10-04 09:00 | 2010-10-04 19:00 |  | start no earlier than 2010-10-04 09:00 | Leticia Vilariño |
| 50 | Actualización diseño según lo implementado | 12h | 2010-10-04 09:00 | 2010-10-04 21:00 |  | start no earlier than 2010-10-04 09:00 | Marcos Sander |
| 51 | Actualización verificación unitaria versión beta | 5h | 2010-10-04 09:00 | 2010-10-04 14:00 |  | start no earlier than 2010-10-04 09:00 | Diego Ricca, Ignacio Infante, Martín Taruselli, Federico Andrade, Federico Trinidad, Vicente Acosta |
| 52 | Liberación versión beta 1.0 | 0w | 2010-10-10 00:00 | 2010-10-10 00:00 | 51, 54 | start no earlier than 2010-10-10 00:00 |  |
| 54 | **Verificar casos de uso** | 0.12d | 2010-10-09 00:00 | 2010-10-09 03:00 |  |  |  |
| 55 | Verificación casos de uso Login, Iniciar iteración, guardar estado | 3h | 2010-10-09 00:00 | 2010-10-09 03:00 |  | start no earlier than 2010-10-09 00:00 | Juan Ghiringhelli |
| 56 | Verificación casos de uso Interrogar Personaje, Actualizar Famoso, Actualizar Ciudad | 3h | 2010-10-09 00:00 | 2010-10-09 03:00 |  | start no earlier than 2010-10-09 00:00 | Javier Madeiro |
| 57 | Verificación casos de uso Obtener Ciudades, Viajar, Emitir orden de arresto, Arrestar | 3h | 2010-10-09 00:00 | 2010-10-09 03:00 |  | start no earlier than 2010-10-09 00:00 | Marcos Sander |
| 58 | Verificación casos de uso Listar Sospechoso, Filtrar sospechoso, Lenguaje, Salir | 3h | 2010-10-09 00:00 | 2010-10-09 03:00 |  | start no earlier than 2010-10-09 00:00 | Alejando Garcia |
| 60 | Seguimiento en jornadas implementación | 5h | 2010-10-03 00:00 | 2010-10-03 05:00 |  | start no earlier than 2010-10-03 00:00 | Juan Ghiringhelli |
| 61 | Presentación al director | 2h | 2010-10-05 00:00 | 2010-10-05 02:00 | 60 | start no earlier than 2010-10-05 00:00 | Juan Ghiringhelli |
| 62 | Gestión de riesgos | 1h | 2010-10-06 00:00 | 2010-10-06 01:00 | 61 | start no earlier than 2010-10-06 00:00 | Juan Ghiringhelli |
| 63 | Modificar cronograma | 4h | 2010-10-09 00:00 | 2010-10-09 04:00 | 60 | start no earlier than 2010-10-09 00:00 | Juan Ghiringhelli |
| 72 | Establecimiento de linea base de código | 1h | 2010-10-10 00:00 | 2010-10-10 01:00 | 52 | start no earlier than 2010-10-09 00:00 | Vicente Acsta |
| 98 | Armar datos Gran sospechoso | 10h | 2010-10-13 00:00 | 2010-10-13 10:00 |  | start no earlier than 2010-10-13 00:00 | Federico Andrade, Vicente Acosta |
| 99 | Depurar parser para traer noticias dinámicas | 5h | 2010-10-13 00:00 | 2010-10-13 05:00 |  | start no earlier than 2010-10-13 00:00 | Federico Trinidad |
| 100 | Armar algoritmo de tiempo para el juego | 2h | 2010-10-13 00:00 | 2010-10-13 02:00 |  | start no earlier than 2010-10-13 00:00 | Juan Ghiringhelli |
| 101 | Menu de ayuda | 4h | 2010-10-13 00:00 | 2010-10-13 04:00 |  | start no earlier than 2010-10-13 00:00 | José Cordero |
| 102 | Inicio pantallas inicio y fin del juego | 5h | 2010-10-13 00:00 | 2010-10-13 05:00 | 49 | start no earlier than 2010-10-13 00:00 | Leticia Vilariño; José Cordero |
| 103 | Inicio de código manejo multi-usuario | 10h | 2010-10-13 00:00 | 2010-10-13 10:00 |  | start no earlier than 2010-10-13 00:00 | Diego Ricca, Martín Taruselli |
| 104 | Diseño casos de uso para iteración 1 | 5h | 2010-10-11 00:00 | 2010-10-11 05:00 | 50 | start no earlier than 2010-10-11 00:00 | Marcos Sander |
| 105 | Diseño casos de prueba para iteración 1 | 5h | 2010-10-11 00:00 | 2010-10-11 05:00 | 51 | start no earlier than 2010-10-11 00:00 | Alejandro García |
| 106 | Verificación unitaria | 3h | 2010-10-16 16:00 | 2010-10-16 19:00 | 98, 99, 103 | finish no earlier than 2010-10-16 19:00 | Ignacio Infante, Diego Ricca, Martín Taruselli, Federico Andrade, Federico Trinidad, Vicente Acosta |
| 107 | Integración iteración 1 | 4h | 2010-10-16 19:00 | 2010-10-16 23:00 | 106 | start no earlier than 2010-10-15 09:00 | Ignacio Infante, Diego Ricca, Martín Taruselli, Federico Andrade, Federico Trinidad, Vicente Acosta, Leticia Vilariño |
| 109 | **Verificar casos de uso** | 0.12d | 2010-10-11 00:00 | 2010-10-11 03:00 |  |  |  |
| 110 | Verificación casos de uso Login, Iniciar iteración, guardar estado | 3h | 2010-10-11 00:00 | 2010-10-11 03:00 |  | start no earlier than 2010-10-11 00:00 | Juan Ghiringhelli |
| 111 | Verificación casos de uso Interrogar Personaje, Actualizar Famoso, Actualizar Ciudad | 3h | 2010-10-11 00:00 | 2010-10-11 03:00 |  | start no earlier than 2010-10-11 00:00 | Javier Madeiro |
| 112 | Verificación casos de uso Obtener Ciudades, Viajar, Emitir orden de arresto, Arrestar | 3h | 2010-10-11 00:00 | 2010-10-11 03:00 |  | start no earlier than 2010-10-11 00:00 | Marcos Sander |
| 113 | Verificación casos de uso Listar Sospechoso, Filtrar sospechoso, Lenguaje, Salir | 3h | 2010-10-11 00:00 | 2010-10-11 03:00 |  | start no earlier than 2010-10-11 00:00 | Alejando Garcia |
| 114 | **Corregir casos de uso** | 0.12d | 2010-10-12 00:00 | 2010-10-12 03:00 |  |  |  |
| 115 | Corregir casos de uso Login, Iniciar iteración, guardar estado | 3h | 2010-10-12 00:00 | 2010-10-12 03:00 | 110 | start no earlier than 2010-10-12 00:00 | Martín Taruselli; Diego Ricca |
| 116 | Corregir casos de uso Interrogar Personaje, Actualizar Famoso, Actualizar Ciudad | 3h | 2010-10-12 00:00 | 2010-10-12 03:00 | 111 | start no earlier than 2010-10-12 00:00 | Vicente Acosta: Federico Trinidad |
| 117 | Corregir casos de uso Obtener Ciudades, Viajar, Emitir orden de arresto, Arrestar | 3h | 2010-10-12 00:00 | 2010-10-12 03:00 | 112 | start no earlier than 2010-10-12 00:00 | Ignacio Infante |
| 118 | Corregir casos de uso Listar Sospechoso, Filtrar sospechoso, Lenguaje, Salir | 3h | 2010-10-12 00:00 | 2010-10-12 03:00 | 113 | start no earlier than 2010-10-12 00:00 | Federico Andrade |
| 120 | Seguimiento por medio de mails, conversaciones, revisión de objetivos de fase y pedido de informes | 3h | 2010-10-11 00:00 | 2010-10-11 03:00 |  | start no earlier than 2010-10-11 00:00 | Juan Ghiringhelli |
| 121 | Revisar estimaciones y medidas | 2h | 2010-10-12 00:00 | 2010-10-12 02:00 |  | start no earlier than 2010-10-12 00:00 | Juan Ghiringhelli |
| 122 | Preparar reunión quincenal | 2h | 2010-10-14 00:00 | 2010-10-14 02:00 | 120 | start no earlier than 2010-10-14 00:00 | Juan Ghiringhelli |
| 123 | Seguimiento en jornadas de implementación | 4h | 2010-10-17 00:00 | 2010-10-17 04:00 |  | start no earlier than 2010-10-17 00:00 | Juan Ghiringhelli |
| 149 | Presentación al cliente | 0h | 2010-10-13 00:00 | 2010-10-13 00:00 |  | start no earlier than 2010-10-13 00:00 |  |
| 156 | Seguimiento por medio de mails, conversaciones, revisión de objetivos de fase y pedido de informes | 3h | 2010-10-17 04:00 | 2010-10-17 07:00 |  | start no earlier than 2010-10-11 00:00 | Juan Ghiringhelli |
| 157 | Seguimiento de riesgos | 2h | 2010-10-20 00:00 | 2010-10-20 02:00 |  | start no earlier than 2010-10-20 00:00 | Juan Ghiringhelli |
| 191 | Seguimiento por medio de mails, conversaciones, revisión de objetivos de fase y pedido de informes | 3h | 2010-10-25 00:00 | 2010-10-25 03:00 |  | start no earlier than 2010-10-25 00:00 | Juan Ghiringhelli |
| 192 | Preparar reunión quincenal | 2h | 2010-10-28 00:00 | 2010-10-28 02:00 |  | start no earlier than 2010-10-28 00:00 | Juan Ghiringhelli |
| 224 | Presentación al cliente | 0h | 2010-10-27 00:00 | 2010-10-27 00:00 |  | start no earlier than 2010-10-27 00:00 |  |
| 230 | Seguimiento por medio de mails, conversaciones, revisión de objetivos de fase y pedido de informes | 3h | 2010-11-01 00:00 | 2010-11-01 03:00 |  | start no earlier than 2010-11-01 00:00 | Juan Ghiringhelli |
| 231 | Evaluar la fase | 2h | 2010-11-04 00:00 | 2010-11-04 02:00 |  | start no earlier than 2010-11-04 00:00 | Juan Ghiringhelli |
| 232 | Seguimiento en jornadas de implementación | 4h | 2010-11-07 00:00 | 2010-11-07 04:00 |  | start no earlier than 2010-11-07 00:00 | Juan Ghiringhelli |
| 233 | Preparar reunión fin de fase | 2h | 2010-11-04 00:00 | 2010-11-04 02:00 |  | start no earlier than 2010-11-04 00:00 | Juan Ghiringhelli |
| 253 | Presentación al cliente | 0h | 2010-11-03 00:00 | 2010-11-03 00:00 |  | start no earlier than 2010-11-03 00:00 | Juan Ghiringhelli |
| 262 | Preparar presentación al director | 2h | 2010-11-18 00:00 | 2010-11-18 02:00 |  | start no earlier than 2010-11-18 00:00 | Juan Ghiringhelli |
| 263 | Preparar presentación final del proyecto | 4h | 2010-11-16 00:00 | 2010-11-16 04:00 |  | start no earlier than 2010-11-16 00:00 | Juan Ghiringhelli |
| 287 | Presentación al cliente | 0h | 2010-11-08 00:00 | 2010-11-08 00:00 |  | start no earlier than 2010-11-08 00:00 | Juan Ghiringhelli |

Removed: 4 Reunión con el Director; 30 Plan de implantación; 36 Revision por Pares; 42 Reunión con el Director; 43 Reunión con el Cliente; 44 Reunión de Integración; 45 Reunión Quincenal; 68 Versión beta del producto; 79 Reunión con el Cliente; 80 Reunión con el Director; 109 Revision por Pares; 115 Reunión con el Director; 116 Reunión Quincenal; 143 Plan de implantación; 146 Versión beta del producto; 155 Reunión con el Cliente; 156 Reunión con el Director; 175 Plan de implantación; 176 Versión beta del producto; 178 Revision por Pares; 186 Reunión con el Cliente; 187 Reunión con el Director; 188 Reunión Quincenal

Changed:

| ID | Task | Start | Finish | Duration | Complete | Total float | Predecessors | Other |
| --- | --- | --- | --- | --- | --- | --- | --- | --- |
| 10 | Plan de desarrollo | 2010-10-10 00:00 → 2010-08-30 15:00 A (-41d) | 2010-10-10 01:00 → 2010-09-05 19:00 A (-35d) | 1h? → 2.93w | 0% → 100% | 32.62d → none | none → 9 | constraint none → finish no earlier than 2010-09-05 19:00; resources Marcos Sander → Analistas |
| 45 | **Fase construcción** | 2010-10-04 09:00 → 2010-10-03 00:00 (-1d) | 2010-11-07 01:00 → 2010-11-07 04:00 | 33.67d? → 35.17d? |  | 6d → 9.92d |  |  |
| 46 | **Iteración 1** | 2010-10-04 09:00 → 2010-10-03 00:00 (-1d) | 2010-10-17 01:00 → 2010-10-17 04:00 | 12.67d? → 14.17d? |  | 25.92d → 29.83d |  |  |
| 47 | **Semana 09** | 2010-10-04 09:00 → 2010-10-03 00:00 (-1d) | 2010-10-10 00:00 → 2010-10-10 01:00 | 5.62d? → 7.04d? |  | 31.96d → 35.96d |  |  |
| 48 | **Diseño / Implementación** |  | 2010-10-05 09:00 → 2010-10-10 00:00 (+5d) | 1d? → 5.62d |  | 36.58d → 36d |  |  |
| 53 | **Verificación** | 2010-10-04 09:00 → 2010-10-09 00:00 (+5d) | 2010-10-05 09:00 → 2010-10-09 03:00 (+4d) | 1d? → 0.12d |  | 36.58d → 36.48d |  |  |
| 59 | **Gestión del Proyecto** | 2010-10-04 09:00 → 2010-10-03 00:00 (-1d) | 2010-10-05 09:00 → 2010-10-09 04:00 (+4d) | 1d? → 6.17d |  | 36.58d → 36.83d |  |  |
| 64 | **Gestión de la Calidad** |  | 2010-10-04 21:30 → 2010-10-09 13:30 (+5d) | 0.52d? → 5.19d? |  | 37.06d → 36.44d |  |  |
| 70 | Revisión de Documentos | 2010-10-04 15:30 → 2010-10-09 07:30 (+5d) | 2010-10-04 21:30 → 2010-10-09 13:30 (+5d) |  |  | 37.06d → 36.44d |  |  |
| 71 | **Gestión de la Configuración** | 2010-10-04 09:00 → 2010-10-10 00:00 (+6d) | 2010-10-05 09:00 → 2010-10-10 01:00 (+5d) | 1d? → 0.04d |  | 36.58d → 35.96d |  |  |
| 73 | **Entregables** |  | 2010-10-04 15:30 → 2010-10-09 07:30 (+5d) | 0.27d? → 4.94d? |  | 37.06d → 36.44d |  |  |
| 74 | Documento de evaluación y ajuste del plan de VyV | 2010-10-04 09:00 → 2010-10-09 03:00 (+5d) | 2010-10-04 11:00 → 2010-10-09 05:00 (+5d) | 2h? → 2h |  | 37.19d → 36.48d | none → 53 |  |
| 75 | Evaluación de la verificación | 2010-10-04 09:00 → 2010-10-09 00:00 (+5d) | 2010-10-04 11:00 → 2010-10-09 02:00 (+5d) | 2h? → 2h |  | 37.19d → 36.6d |  | constraint none → start no earlier than 2010-10-09 00:00 |
| 76 | Informe de verificación de documento | 2010-10-04 09:00 → 2010-10-09 00:00 (+5d) | 2010-10-04 11:00 → 2010-10-09 02:00 (+5d) | 2h? → 2h |  | 37.19d → 36.6d |  | constraint none → start no earlier than 2010-10-09 00:00 |
| 77 | Reporte de pruebas | 2010-10-04 09:00 → 2010-10-09 00:00 (+5d) | 2010-10-04 13:00 → 2010-10-09 04:00 (+5d) | 4h? → 4h |  | 37.1d → 36.52d |  | constraint none → start no earlier than 2010-10-09 00:00 |
| 78 | Documento de evaluación y ajuste del plan de calidad | 2010-10-04 09:00 → 2010-10-09 00:00 (+5d) | 2010-10-04 11:00 → 2010-10-09 02:00 (+5d) | 2h? → 2h |  | 37.19d → 36.6d |  | constraint none → start no earlier than 2010-10-09 00:00 |
| 79 | Informe de revisión de SQA | 2010-10-04 09:00 → 2010-10-09 00:00 (+5d) | 2010-10-04 11:00 → 2010-10-09 02:00 (+5d) | 2h? → 2h |  | 37.19d → 36.6d |  | constraint none → start no earlier than 2010-10-09 00:00 |
| 80 | Informe de RTF | 2010-10-04 12:30 → 2010-10-07 00:00 (+3d) | 2010-10-04 14:00 → 2010-10-07 01:30 (+3d) | 1.5h? → 1.5h |  | 37.06d → 38.62d | 68 → none | constraint none → start no earlier than 2010-10-07 00:00 |
| 81 | Materiales para soporte al usuario | 2010-10-04 09:00 → 2010-10-07 00:00 (+3d) | 2010-10-04 10:00 → 2010-10-07 02:00 (+3d) | 1h? → 2h |  | 37.23d → 38.6d |  | constraint none → start no earlier than 2010-10-07 00:00 |
| 82 | Acta de reunión con el director del proyecto | 2010-10-04 09:00 → 2010-10-06 00:00 (+2d) | 2010-10-04 10:00 → 2010-10-06 00:30 (+2d) | 1h? → 0.5h |  | 37.23d → 39.67d |  | constraint none → start no earlier than 2010-10-06 00:00 |
| 83 | Documento de riesgos | 2010-10-04 09:00 → 2010-10-06 00:00 (+2d) | 2010-10-04 10:00 → 2010-10-06 01:00 (+2d) | 1h? → 1h |  | 37.23d → 39.65d |  | constraint none → start no earlier than 2010-10-06 00:00 |
| 84 | Informe de situación de proyecto | 2010-10-04 09:00 → 2010-10-09 00:00 (+5d) | 2010-10-04 10:00 → 2010-10-09 01:00 (+5d) | 1h? → 1h |  | 37.23d → 36.65d |  | constraint none → start no earlier than 2010-10-09 00:00 |
| 85 | Presentación al director del proyecto |  | 2010-10-04 10:00 → 2010-10-04 21:00 | 1h? → 0.5d |  | 37.23d → 40.81d |  |  |
| 86 | Registro de actividades | 2010-10-04 09:00 → 2010-10-09 00:00 (+5d) | 2010-10-04 10:00 → 2010-10-09 01:00 (+5d) | 1h? → 1h |  | 37.23d → 36.65d |  | constraint none → start no earlier than 2010-10-09 00:00 |
| 87 | Modelo de diseño | 2010-10-04 09:00 → 2010-10-09 00:00 (+5d) | 2010-10-04 10:00 → 2010-10-09 06:00 (+5d) | 1h? → 6h |  | 37.23d → 36.44d |  | constraint none → start no earlier than 2010-10-09 00:00 |
| 88 | Plan de desarrollo | 2010-10-04 09:00 → 2010-10-09 00:00 (+5d) | 2010-10-04 10:00 → 2010-10-09 02:00 (+5d) | 1h? → 2h |  | 37.23d → 36.6d |  | constraint none → start no earlier than 2010-10-09 00:00 |
| 89 | Informe de integración | 2010-10-04 09:00 → 2010-10-09 00:00 (+5d) | 2010-10-04 10:00 → 2010-10-09 02:00 (+5d) | 1h? → 2h |  | 37.23d → 36.6d |  | constraint none → start no earlier than 2010-10-09 00:00 |
| 90 | Plan de integración de la iteración | 2010-10-04 09:00 → 2010-10-09 00:00 (+5d) | 2010-10-04 10:00 → 2010-10-09 02:00 (+5d) | 1h? → 2h |  | 37.23d → 36.6d |  | constraint none → start no earlier than 2010-10-09 00:00 |
| 91 | Informe de verificación unitaria | 2010-10-04 09:00 → 2010-10-09 00:00 (+5d) | 2010-10-04 09:30 → 2010-10-09 00:30 (+5d) |  |  | 37.25d → 36.67d |  | constraint none → start no earlier than 2010-10-09 00:00 |
| 92 | Descripción de la versión | 2010-10-04 09:00 → 2010-10-09 00:00 (+5d) | 2010-10-04 10:00 → 2010-10-09 02:00 (+5d) | 1h? → 2h |  | 37.23d → 36.6d |  | constraint none → start no earlier than 2010-10-09 00:00 |
| 93 | Informe de la línea base del proyecto | 2010-10-04 09:00 → 2010-10-09 00:00 (+5d) | 2010-10-04 10:00 → 2010-10-09 03:00 (+5d) | 1h? → 3h |  | 37.23d → 36.56d |  | constraint none → start no earlier than 2010-10-09 00:00 |
| 94 | Entrega semanal de SQA | 2010-10-04 14:00 → 2010-10-09 06:00 (+5d) | 2010-10-04 15:30 → 2010-10-09 07:30 (+5d) | 1.5h? → 1.5h |  | 37.06d → 36.44d | 74, 75, 76, 77, 78, 79, 80, 81, 82, 83, 84, 85, 86, Plan de implantación, 87, 88, 89, 90, 91, Revision por Pares, 92, 93 → 74, 75, 76, 77, 78, 79, 80, 81, 82, 83, 84, 85, 86, 87, 88, 89, 90, 91, 92, 93 |  |
| 95 | Buffer de error | 2010-10-09 23:00 → 2010-10-09 21:00 |  | 1h? → 3h |  | 31.96d → 36d |  |  |
| 96 | **Semana 10** | 2010-10-10 00:00 → 2010-10-10 01:00 | 2010-10-17 01:00 → 2010-10-17 04:00 | 7.04d? → 7.12d? |  | 25.92d → 29.83d |  |  |
| 97 | **Diseño / Implementación** | 2010-10-10 00:00 → 2010-10-11 00:00 (+1d) | 2010-10-11 00:00 → 2010-10-16 23:00 (+5d) | 1d? → 5.96d |  | 31.96d → 30.04d |  |  |
| 108 | **Verificación** | 2010-10-10 00:00 → 2010-10-11 00:00 (+1d) | 2010-10-11 00:00 → 2010-10-12 03:00 (+1d) | 1d? → 1.12d |  | 31.96d → 34.88d |  |  |
| 119 | **Gestión del Proyecto** | 2010-10-10 00:00 → 2010-10-11 00:00 (+1d) | 2010-10-11 00:00 → 2010-10-17 04:00 (+6d) | 1d? → 6.17d |  | 31.96d → 29.83d |  |  |
| 124 | **Gestión de la Calidad** | 2010-10-10 02:00 → 2010-10-16 11:00 (+6d) | 2010-10-10 08:00 → 2010-10-16 17:00 (+6d) |  |  | 32.62d → 30.29d |  |  |
| 125 | Revisión de Documentos | 2010-10-10 02:00 → 2010-10-16 11:00 (+6d) | 2010-10-10 08:00 → 2010-10-16 17:00 (+6d) |  |  | 32.62d → 30.29d |  |  |
| 126 | Gestión de la Configuración | 2010-10-10 00:00 → 2010-10-10 01:00 | 2010-10-11 00:00 → 2010-10-11 01:00 |  |  | 31.96d → 35.96d |  |  |
| 127 | **Entregables** | 2010-10-10 00:00 → 2010-10-14 00:00 (+4d) | 2010-10-10 02:00 → 2010-10-16 11:00 (+6d) | 0.08d? → 2.46d |  | 32.62d → 30.29d |  |  |
| 128 | Modelo de casos de prueba | 2010-10-10 00:00 → 2010-10-16 00:00 (+6d) | 2010-10-10 01:00 → 2010-10-16 10:00 (+6d) | 1h? → 10h |  | 32.62d → 30.29d |  | constraint none → start no earlier than 2010-10-16 00:00 |
| 129 | Plan de verificación de la iteración | 2010-10-10 00:00 → 2010-10-16 00:00 (+6d) | 2010-10-10 01:00 → 2010-10-16 03:00 (+6d) | 1h? → 3h |  | 32.62d → 30.58d |  | constraint none → start no earlier than 2010-10-16 00:00 |
| 130 | Materiales para capacitación | 2010-10-10 00:00 → 2010-10-14 00:00 (+4d) | 2010-10-10 01:00 → 2010-10-14 02:00 (+4d) | 1h? → 2h |  |  |  | constraint none → start no earlier than 2010-10-14 00:00 |
| 131 | Materiales para soporte al usuario | 2010-10-10 00:00 → 2010-10-14 00:00 (+4d) | 2010-10-10 01:00 → 2010-10-14 02:00 (+4d) | 1h? → 2h |  |  |  | constraint none → start no earlier than 2010-10-14 00:00 |
| 132 | Acta de reunión de equipo | 2010-10-10 00:00 → 2010-10-16 00:00 (+6d) | 2010-10-10 01:00 → 2010-10-16 00:30 (+6d) | 1h? → 0.5h |  | 32.62d → 30.69d |  | constraint none → start no earlier than 2010-10-16 00:00 |
| 133 | Documento de riesgos | 2010-10-10 00:00 → 2010-10-16 00:00 (+6d) | 2010-10-10 01:00 → 2010-10-16 00:30 (+6d) | 1h? → 0.5h |  | 32.62d → 30.69d |  | constraint none → start no earlier than 2010-10-16 00:00 |
| 134 | Documento de validación con el cliente | 2010-10-10 00:00 → 2010-10-14 00:00 (+4d) | 2010-10-10 01:00 → 2010-10-14 00:30 (+4d) | 1h? → 0.5h |  | 32.62d → 32.69d |  | constraint none → start no earlier than 2010-10-14 00:00 |
| 135 | Informe de situación de proyecto | 2010-10-10 00:00 → 2010-10-16 00:00 (+6d) | 2010-10-10 01:00 → 2010-10-16 01:00 (+6d) | 1h? → 1h |  | 32.62d → 30.67d |  | constraint none → start no earlier than 2010-10-16 00:00 |
| 136 | Lecciones Aprendidas | 2010-10-10 00:00 → 2010-10-16 00:00 (+6d) | 2010-10-10 01:00 → 2010-10-16 00:30 (+6d) | 1h? → 0.5h |  | 32.62d → 30.69d |  | constraint none → start no earlier than 2010-10-16 00:00 |
| 137 | Plan de la iteración | 2010-10-10 00:00 → 2010-10-16 00:00 (+6d) | 2010-10-10 01:00 → 2010-10-16 02:00 (+6d) | 1h? → 2h |  | 32.62d → 30.62d |  | constraint none → start no earlier than 2010-10-16 00:00 |
| 138 | Registro de actividades | 2010-10-10 00:00 → 2010-10-16 00:00 (+6d) | 2010-10-10 01:00 → 2010-10-16 01:00 (+6d) | 1h? → 1h |  | 32.62d → 30.67d |  | constraint none → start no earlier than 2010-10-16 00:00 |
| 139 | Modelo de Datos | 2010-10-10 00:00 → 2010-10-16 00:00 (+6d) | 2010-10-10 01:00 → 2010-10-16 01:00 (+6d) | 1h? → 1h |  | 32.62d → 30.67d |  | constraint none → start no earlier than 2010-10-16 00:00 |
| 140 | Modelo de diseño | 2010-10-10 00:00 → 2010-10-16 00:00 (+6d) | 2010-10-10 01:00 → 2010-10-16 04:00 (+6d) | 1h? → 4h |  | 32.62d → 30.54d |  | constraint none → start no earlier than 2010-10-16 00:00 |
| 141 | Modelo de Implementación | 2010-10-10 00:00 → 2010-10-16 00:00 (+6d) | 2010-10-10 01:00 → 2010-10-16 02:00 (+6d) | 1h? → 2h |  | 32.62d → 30.62d |  | constraint none → start no earlier than 2010-10-16 00:00 |
| 142 | Ejecutable de la Iteración | 2010-10-10 00:00 → 2010-10-16 00:00 (+6d) | 2010-10-10 01:00 → 2010-10-16 00:00 (+6d) | 1h? → 0h |  | 32.62d → 30.71d |  | constraint none → start no earlier than 2010-10-16 00:00 |
| 143 | Informe de integración | 2010-10-10 00:00 → 2010-10-16 00:00 (+6d) | 2010-10-10 01:00 → 2010-10-16 01:00 (+6d) | 1h? → 1h |  | 32.62d → 30.67d |  | constraint none → start no earlier than 2010-10-16 00:00 |
| 144 | Plan de integración de la iteración | 2010-10-10 00:00 → 2010-10-16 00:00 (+6d) | 2010-10-10 01:00 → 2010-10-16 01:00 (+6d) | 1h? → 1h |  | 32.62d → 30.67d |  | constraint none → start no earlier than 2010-10-16 00:00 |
| 145 | Gestión de cambios | 2010-10-10 00:00 → 2010-10-16 00:00 (+6d) | 2010-10-10 01:00 → 2010-10-16 01:00 (+6d) | 1h? → 1h |  | 32.62d → 30.67d |  | constraint none → start no earlier than 2010-10-16 00:00 |
| 146 | Notas de la versión | 2010-10-10 00:00 → 2010-10-16 00:00 (+6d) | 2010-10-10 01:00 → 2010-10-16 03:00 (+6d) | 1h? → 3h |  | 32.62d → 30.58d |  | constraint none → start no earlier than 2010-10-16 00:00 |
| 147 | Registro de versiones | 2010-10-10 00:00 → 2010-10-16 00:00 (+6d) | 2010-10-10 01:00 → 2010-10-16 02:00 (+6d) | 1h? → 2h |  | 32.62d → 30.62d |  | constraint none → start no earlier than 2010-10-16 00:00 |
| 148 | Entrega semanal de SQA | 2010-10-10 01:00 → 2010-10-16 10:00 (+6d) | 2010-10-10 02:00 → 2010-10-16 11:00 (+6d) | 1h? → 1h |  | 32.62d → 30.29d | 128, 129, 130, 131, 132, 133, 134, 135, 136, 137, 138, 139, 140, 141, 10, Versión beta del producto, 142, 143, 144, 145, 146, 147 → 128, 129, 130, 131, 132, 133, 134, 135, 136, 137, 138, 139, 140, 141, 142, 143, 144, 145, 146, 147 | constraint none → start no earlier than 2010-10-16 00:00 |
| 151 | **Iteración 2** | 2010-10-17 01:00 → 2010-10-17 04:00 | 2010-11-07 01:00 → 2010-11-07 04:00 |  |  | 6d → 9.92d |  |  |
| 152 | **Semana 11** | 2010-10-17 01:00 → 2010-10-17 04:00 |  | 7d? → 6.88d? |  | 20d → 24.04d |  |  |
| 153 | Diseño / Implementación | 2010-10-17 01:00 → 2010-10-17 04:00 | 2010-10-18 01:00 → 2010-10-18 04:00 |  |  | 26d → 29.92d |  |  |
| 154 | Verificación | 2010-10-17 01:00 → 2010-10-17 04:00 | 2010-10-18 01:00 → 2010-10-18 04:00 |  |  | 26d → 29.92d |  |  |
| 155 | **Gestión del Proyecto** | 2010-10-17 01:00 → 2010-10-17 04:00 | 2010-10-18 01:00 → 2010-10-20 02:00 (+2d) | 1d? → 2.92d |  | 26d → 28d |  |  |
| 158 | **Gestión de la Calidad** | 2010-10-17 01:00 → 2010-10-17 04:00 | 2010-10-17 06:00 → 2010-10-17 09:00 |  |  | 26.75d → 30.62d |  |  |
| 159 | **RTF del Código** | 2010-10-17 01:00 → 2010-10-17 04:00 | 2010-10-17 06:00 → 2010-10-17 09:00 |  |  | 26.75d → 30.62d |  |  |
| 160 | Estudio del Project del Proyecto | 2010-10-17 01:00 → 2010-10-17 04:00 | 2010-10-17 02:00 → 2010-10-17 05:00 |  |  | 26.75d → 30.62d |  |  |

| ID | Task | Start | Finish | Duration | Total float | Predecessors | Other |
| --- | --- | --- | --- | --- | --- | --- | --- |
| 161 | Revisión Técnica | 2010-10-17 02:00 → 2010-10-17 05:00 | 2010-10-17 04:00 → 2010-10-17 07:00 |  | 26.75d → 30.62d |  |  |
| 162 | Conclusiones, proponer acciones correctivas | 2010-10-17 04:00 → 2010-10-17 07:00 | 2010-10-17 05:00 → 2010-10-17 08:00 |  | 26.75d → 30.62d |  |  |
| 163 | Seguimiento de la RTF | 2010-10-17 05:00 → 2010-10-17 08:00 | 2010-10-17 06:00 → 2010-10-17 09:00 |  | 26.79d → 30.71d |  |  |
| 164 | Revisión de Documentos | 2010-10-17 01:00 → 2010-10-17 04:00 | 2010-10-17 07:00 → 2010-10-17 10:00 |  | 26.75d → 30.67d |  |  |
| 165 | Gestión de la Configuración | 2010-10-17 01:00 → 2010-10-17 04:00 | 2010-10-18 01:00 → 2010-10-18 04:00 |  | 26d → 29.92d |  |  |
| 166 | **Entregables** | 2010-10-17 01:00 → 2010-10-21 00:00 (+4d) | 2010-10-17 07:00 → 2010-10-23 05:30 (+6d) | 0.25d? → 2.23d | 26.75d → 24.85d |  |  |
| 167 | Documento de evaluación y ajuste del plan de VyV | 2010-10-17 01:00 → 2010-10-23 00:00 (+6d) | 2010-10-17 02:00 → 2010-10-23 02:00 (+6d) | 1h? → 2h | 26.92d → 24.94d |  | constraint none → start no earlier than 2010-10-23 00:00 |
| 168 | Evaluación de la verificación | 2010-10-17 01:00 → 2010-10-23 00:00 (+6d) | 2010-10-17 02:00 → 2010-10-23 03:00 (+6d) | 1h? → 3h | 26.92d → 24.9d |  | constraint none → start no earlier than 2010-10-23 00:00 |
| 169 | Informe de verificación de documento (Documentación técnica) | 2010-10-17 01:00 → 2010-10-23 00:00 (+6d) | 2010-10-17 02:00 → 2010-10-23 02:00 (+6d) | 1h? → 2h | 26.92d → 24.94d |  | constraint none → start no earlier than 2010-10-23 00:00 |
| 170 | Reporte de pruebas | 2010-10-17 01:00 → 2010-10-23 00:00 (+6d) | 2010-10-17 02:00 → 2010-10-23 04:00 (+6d) | 1h? → 4h | 26.92d → 24.85d |  | constraint none → start no earlier than 2010-10-23 00:00 |
| 171 | Documento de evaluación y ajuste del plan de calidad | 2010-10-17 01:00 → 2010-10-23 00:00 (+6d) | 2010-10-17 02:00 → 2010-10-23 02:00 (+6d) | 1h? → 2h | 26.92d → 24.94d |  | constraint none → start no earlier than 2010-10-23 00:00 |
| 172 | Informe de revisión de SQA | 2010-10-17 01:00 → 2010-10-23 00:00 (+6d) | 2010-10-17 02:00 → 2010-10-23 02:00 (+6d) | 1h? → 2h | 26.92d → 24.94d |  | constraint none → start no earlier than 2010-10-23 00:00 |
| 173 | Informe de RTF | 2010-10-17 05:00 → 2010-10-23 00:00 (+6d) | 2010-10-17 06:00 → 2010-10-23 01:30 (+6d) | 1h? → 1.5h | 26.75d → 24.96d |  | constraint none → start no earlier than 2010-10-23 00:00 |
| 174 | Materiales para capacitación | 2010-10-17 01:00 → 2010-10-21 00:00 (+4d) | 2010-10-17 02:00 → 2010-10-21 02:00 (+4d) | 1h? → 2h | 26.92d → 26.94d |  | constraint none → start no earlier than 2010-10-21 00:00 |
| 175 | Materiales para soporte al usuario | 2010-10-17 01:00 → 2010-10-21 00:00 (+4d) | 2010-10-17 02:00 → 2010-10-21 02:00 (+4d) | 1h? → 2h | 26.92d → 26.94d |  | constraint none → start no earlier than 2010-10-21 00:00 |
| 176 | Documento de Evaluacion y Ajustes al Plan del Proyecto | 2010-10-17 01:00 → 2010-10-23 00:00 (+6d) | 2010-10-17 02:00 → 2010-10-23 01:00 (+6d) | 1h? → 1h | 26.92d → 24.98d |  | constraint none → start no earlier than 2010-10-23 00:00 |
| 177 | Informe de situación de proyecto | 2010-10-17 01:00 → 2010-10-23 00:00 (+6d) | 2010-10-17 02:00 → 2010-10-23 01:00 (+6d) | 1h? → 1h | 26.92d → 24.98d |  | constraint none → start no earlier than 2010-10-23 00:00 |
| 178 | Registro de actividades | 2010-10-17 01:00 → 2010-10-23 00:00 (+6d) | 2010-10-17 02:00 → 2010-10-23 01:00 (+6d) | 1h? → 1h | 26.92d → 24.98d |  | constraint none → start no earlier than 2010-10-23 00:00 |
| 179 | Documentación técnica | 2010-10-17 01:00 → 2010-10-23 00:00 (+6d) | 2010-10-17 02:00 → 2010-10-23 01:00 (+6d) | 1h? → 1h | 26.92d → 24.98d |  | constraint none → start no earlier than 2010-10-23 00:00 |
| 180 | Plan de desarrollo | 2010-10-17 01:00 → 2010-10-23 00:00 (+6d) | 2010-10-17 02:00 → 2010-10-23 01:00 (+6d) | 1h? → 1h | 26.92d → 24.98d |  | constraint none → start no earlier than 2010-10-23 00:00 |
| 181 | Ejecutable de la Iteración | 2010-10-17 01:00 → 2010-10-23 00:00 (+6d) | 2010-10-17 02:00 → 2010-10-23 00:00 (+6d) | 1h? → 0h | 26.92d → 25.02d |  | constraint none → start no earlier than 2010-10-23 00:00 |
| 182 | Informe de verificación unitaria | 2010-10-17 01:00 → 2010-10-23 00:00 (+6d) | 2010-10-17 01:30 → 2010-10-23 00:30 (+6d) | 0.5h? → 0.5h | 26.94d → 25d |  | constraint none → start no earlier than 2010-10-23 00:00 |
| 183 | Descripción de la versión | 2010-10-17 01:00 → 2010-10-23 00:00 (+6d) | 2010-10-17 02:00 → 2010-10-23 02:00 (+6d) | 1h? → 2h | 26.92d → 24.94d |  | constraint none → start no earlier than 2010-10-23 00:00 |
| 184 | Informe de la línea base del proyecto | 2010-10-17 01:00 → 2010-10-23 00:00 (+6d) | 2010-10-17 02:00 → 2010-10-23 03:00 (+6d) | 1h? → 3h | 26.92d → 24.9d |  | constraint none → start no earlier than 2010-10-23 00:00 |
| 185 | Entrega semanal de SQA | 2010-10-17 06:00 → 2010-10-23 04:00 (+6d) | 2010-10-17 07:00 → 2010-10-23 05:30 (+6d) | 1h? → 1.5h | 26.75d → 24.85d | 167, 168, 169, 170, 171, 172, 173, 174, 175, 176, 177, 178, 179, 180, 181, 182, Revision por Pares, 183, 184 → 167, 168, 169, 170, 171, 172, 173, 174, 175, 176, 177, 178, 179, 180, 181, 182, 183, 184 |  |
| 190 | **Gestión del Proyecto** | 2010-10-24 01:00 → 2010-10-25 00:00 (+1d) | 2010-10-25 01:00 → 2010-10-28 02:00 (+3d) | 1d? → 3.08d | 19d → 20d |  |  |
| 201 | **Entregables** | 2010-10-24 01:00 → 2010-10-28 00:00 (+4d) | 2010-10-24 04:00 → 2010-10-30 06:30 (+6d) | 0.12d? → 2.27d | 19.88d → 17.81d |  |  |
| 202 | Evaluación de la verificación | 2010-10-24 01:00 → 2010-10-30 00:00 (+6d) | 2010-10-24 02:00 → 2010-10-30 02:00 (+6d) | 1h? → 2h | 19.92d → 17.94d |  | constraint none → start no earlier than 2010-10-30 00:00 |
| 203 | Modelo de casos de prueba | 2010-10-24 01:00 → 2010-10-30 00:00 (+6d) | 2010-10-24 02:00 → 2010-10-30 05:00 (+6d) | 1h? → 5h | 19.92d → 17.81d |  | constraint none → start no earlier than 2010-10-30 00:00 |
| 204 | Plan de verificación de la iteración | 2010-10-24 01:00 → 2010-10-30 00:00 (+6d) | 2010-10-24 02:00 → 2010-10-30 02:00 (+6d) | 1h? → 2h | 19.92d → 17.94d |  | constraint none → start no earlier than 2010-10-30 00:00 |
| 205 | Reporte de pruebas | 2010-10-24 01:00 → 2010-10-30 00:00 (+6d) | 2010-10-24 02:00 → 2010-10-30 04:00 (+6d) | 1h? → 4h | 19.92d → 17.85d |  | constraint none → start no earlier than 2010-10-30 00:00 |
| 206 | Informe de RTF | 2010-10-24 02:00 → 2010-10-30 00:00 (+6d) | 2010-10-24 03:00 → 2010-10-30 01:30 (+6d) | 1h? → 1.5h | 19.88d → 17.96d |  | constraint none → start no earlier than 2010-10-30 00:00 |
| 207 | Materiales para capacitación | 2010-10-24 01:00 → 2010-10-28 00:00 (+4d) | 2010-10-24 02:00 → 2010-10-28 02:00 (+4d) | 1h? → 2h | 19.92d → 19.94d |  | constraint none → start no earlier than 2010-10-28 00:00 |
| 208 | Materiales para soporte al usuario | 2010-10-24 01:00 → 2010-10-28 00:00 (+4d) | 2010-10-24 02:00 → 2010-10-28 02:00 (+4d) | 1h? → 2h | 19.92d → 19.94d |  | constraint none → start no earlier than 2010-10-28 00:00 |
| 209 | Acta de reunión de equipo | 2010-10-24 01:00 → 2010-10-30 00:00 (+6d) | 2010-10-24 02:00 → 2010-10-30 00:30 (+6d) | 1h? → 0.5h | 19.92d → 18d |  | constraint none → start no earlier than 2010-10-30 00:00 |
| 210 | Informe de conclusiones de la fase | 2010-10-24 01:00 → 2010-10-30 00:00 (+6d) | 2010-10-24 02:00 → 2010-10-30 01:00 (+6d) | 1h? → 1h | 19.92d → 17.98d |  | constraint none → start no earlier than 2010-10-30 00:00 |
| 211 | Informe de situación de proyecto | 2010-10-24 01:00 → 2010-10-30 00:00 (+6d) | 2010-10-24 02:00 → 2010-10-30 01:00 (+6d) | 1h? → 1h | 19.92d → 17.98d |  | constraint none → start no earlier than 2010-10-30 00:00 |
| 212 | Lecciones Aprendidas | 2010-10-24 01:00 → 2010-10-30 00:00 (+6d) | 2010-10-24 02:00 → 2010-10-30 00:30 (+6d) | 1h? → 0.5h | 19.92d → 18d |  | constraint none → start no earlier than 2010-10-30 00:00 |
| 213 | Plan de la iteración | 2010-10-24 01:00 → 2010-10-30 00:00 (+6d) | 2010-10-24 02:00 → 2010-10-30 02:00 (+6d) | 1h? → 2h | 19.92d → 17.94d |  | constraint none → start no earlier than 2010-10-30 00:00 |
| 214 | Presentación del sistema | 2010-10-24 01:00 → 2010-10-30 00:00 (+6d) | 2010-10-24 02:00 → 2010-10-30 03:00 (+6d) | 1h? → 3h | 19.92d → 17.9d |  | constraint none → start no earlier than 2010-10-30 00:00 |
| 215 | Registro de actividades | 2010-10-24 01:00 → 2010-10-30 00:00 (+6d) | 2010-10-24 02:00 → 2010-10-30 01:00 (+6d) | 1h? → 1h | 19.92d → 17.98d |  | constraint none → start no earlier than 2010-10-30 00:00 |
| 216 | Documentación técnica | 2010-10-24 01:00 → 2010-10-30 00:00 (+6d) | 2010-10-24 02:00 → 2010-10-30 01:00 (+6d) | 1h? → 1h | 19.92d → 17.98d |  | constraint none → start no earlier than 2010-10-30 00:00 |
| 217 | Plan de desarrollo | 2010-10-24 01:00 → 2010-10-30 00:00 (+6d) | 2010-10-24 02:00 → 2010-10-30 01:00 (+6d) | 1h? → 1h | 19.92d → 17.98d |  | constraint none → start no earlier than 2010-10-30 00:00 |
| 218 | Informe de integración | 2010-10-24 01:00 → 2010-10-30 00:00 (+6d) | 2010-10-24 02:00 → 2010-10-30 01:00 (+6d) | 1h? → 1h | 19.92d → 17.98d |  | constraint none → start no earlier than 2010-10-30 00:00 |
| 219 | Descripción de la versión | 2010-10-24 01:00 → 2010-10-30 00:00 (+6d) | 2010-10-24 02:00 → 2010-10-30 02:00 (+6d) | 1h? → 2h | 19.92d → 17.94d |  | constraint none → start no earlier than 2010-10-30 00:00 |
| 220 | Gestión de cambios | 2010-10-24 01:00 → 2010-10-30 00:00 (+6d) | 2010-10-24 02:00 → 2010-10-30 01:00 (+6d) | 1h? → 1h | 19.92d → 17.98d |  | constraint none → start no earlier than 2010-10-30 00:00 |
| 221 | Notas de la versión | 2010-10-24 01:00 → 2010-10-30 00:00 (+6d) | 2010-10-24 02:00 → 2010-10-30 03:00 (+6d) | 1h? → 3h | 19.92d → 17.9d |  | constraint none → start no earlier than 2010-10-30 00:00 |
| 222 | Registro de versiones | 2010-10-24 01:00 → 2010-10-30 00:00 (+6d) | 2010-10-24 02:00 → 2010-10-30 02:00 (+6d) | 1h? → 2h | 19.92d → 17.94d |  | constraint none → start no earlier than 2010-10-30 00:00 |
| 223 | Entrega semanal de SQA | 2010-10-24 03:00 → 2010-10-30 05:00 (+6d) | 2010-10-24 04:00 → 2010-10-30 06:30 (+6d) | 1h? → 1.5h | 19.88d → 17.81d | 202, 203, 204, 205, 206, 207, 208, 209, 210, 211, 212, 213, 214, 215, Plan de implantación, 216, 217, Versión beta del producto, 218, 219, 220, 221, 222 → 202, 203, 204, 205, 206, 207, 208, 209, 210, 211, 212, 213, 214, 215, 216, 217, 218, 219, 220, 221, 222 |  |
| 226 | **Semana 13** |  | 2010-11-07 01:00 → 2010-11-07 04:00 | 7d? → 7.12d? | 6d → 9.92d |  |  |
| 229 | **Gestión del Proyecto** | 2010-10-31 01:00 → 2010-11-01 00:00 (+1d) | 2010-11-01 01:00 → 2010-11-07 04:00 (+6d) | 1d? → 6.17d | 12d → 9.92d |  |  |
| 237 | **Entregables** | 2010-10-31 01:00 → 2010-11-03 00:00 (+3d) | 2010-10-31 03:00 → 2010-11-06 06:30 (+6d) | 0.08d? → 3.27d | 12.92d → 10.81d |  |  |
| 238 | Evaluación de la verificación | 2010-10-31 01:00 → 2010-11-06 00:00 (+6d) | 2010-10-31 02:00 → 2010-11-06 02:00 (+6d) | 1h? → 2h | 12.92d → 10.94d |  | constraint none → start no earlier than 2010-11-06 00:00 |
| 239 | Informe de verificación del sistema | 2010-10-31 01:00 → 2010-11-06 00:00 (+6d) | 2010-10-31 02:00 → 2010-11-06 03:00 (+6d) | 1h? → 3h | 12.92d → 10.9d |  | constraint none → start no earlier than 2010-11-06 00:00 |
| 240 | Reporte de pruebas | 2010-10-31 01:00 → 2010-11-06 00:00 (+6d) | 2010-10-31 02:00 → 2010-11-06 05:00 (+6d) | 1h? → 5h | 12.92d → 10.81d |  | constraint none → start no earlier than 2010-11-06 00:00 |
| 241 | Reporte Final de Pruebas de Aceptacion | 2010-10-31 01:00 → 2010-11-06 00:00 (+6d) | 2010-10-31 02:00 → 2010-11-06 04:00 (+6d) | 1h? → 4h | 12.92d → 10.85d |  | constraint none → start no earlier than 2010-11-06 00:00 |
| 242 | Informe de revisión de SQA | 2010-10-31 01:00 → 2010-11-06 00:00 (+6d) | 2010-10-31 02:00 → 2010-11-06 02:00 (+6d) | 1h? → 2h | 12.92d → 10.94d |  | constraint none → start no earlier than 2010-11-06 00:00 |
| 243 | Materiales para capacitación | 2010-10-31 01:00 → 2010-11-04 00:00 (+4d) | 2010-10-31 02:00 → 2010-11-04 02:00 (+4d) | 1h? → 2h | 12.92d → 12.94d |  | constraint none → start no earlier than 2010-11-04 00:00 |
| 244 | Materiales para soporte al usuario | 2010-10-31 01:00 → 2010-11-04 00:00 (+4d) | 2010-10-31 02:00 → 2010-11-04 02:00 (+4d) | 1h? → 2h | 12.92d → 12.94d |  | constraint none → start no earlier than 2010-11-04 00:00 |
| 245 | Acta de reunión con el director del proyecto | 2010-10-31 01:00 → 2010-11-03 00:00 (+3d) | 2010-10-31 02:00 → 2010-11-03 00:30 (+3d) | 1h? → 0.5h | 12.92d → 14d |  | constraint none → start no earlier than 2010-11-03 00:00 |
| 246 | Informe de situación de proyecto | 2010-10-31 01:00 → 2010-11-06 00:00 (+6d) | 2010-10-31 02:00 → 2010-11-06 01:00 (+6d) | 1h? → 1h | 12.92d → 10.98d |  | constraint none → start no earlier than 2010-11-06 00:00 |
| 247 | Presentación al director del proyecto | 2010-10-31 01:00 → 2010-11-03 00:00 (+3d) | 2010-10-31 02:00 → 2010-11-03 02:00 (+3d) | 1h? → 2h | 12.92d → 13.94d |  | constraint none → start no earlier than 2010-11-03 00:00 |
| 248 | Registro de actividades | 2010-10-31 01:00 → 2010-11-06 00:00 (+6d) | 2010-10-31 02:00 → 2010-11-06 01:00 (+6d) | 1h? → 1h | 12.92d → 10.98d |  | constraint none → start no earlier than 2010-11-06 00:00 |
| 249 | Informe de verificación de integración | 2010-10-31 01:00 → 2010-11-06 00:00 (+6d) | 2010-10-31 02:00 → 2010-11-06 01:00 (+6d) | 1h? → 1h | 12.92d → 10.98d |  | constraint none → start no earlier than 2010-11-06 00:00 |
| 250 | Descripción de la versión | 2010-10-31 01:00 → 2010-11-06 00:00 (+6d) | 2010-10-31 02:00 → 2010-11-06 02:00 (+6d) | 1h? → 2h | 12.92d → 10.94d |  | constraint none → start no earlier than 2010-11-06 00:00 |
| 251 | Informe de la línea base del proyecto | 2010-10-31 01:00 → 2010-11-06 00:00 (+6d) | 2010-10-31 02:00 → 2010-11-06 03:00 (+6d) | 1h? → 3h | 12.92d → 10.9d |  | constraint none → start no earlier than 2010-11-06 00:00 |
| 252 | Entrega semanal de SQA | 2010-10-31 02:00 → 2010-11-06 05:00 (+6d) | 2010-10-31 03:00 → 2010-11-06 06:30 (+6d) | 1h? → 1.5h | 12.92d → 10.81d | 238, 239, 240, 241, 242, 243, 244, 245, 246, 247, 248, Plan de implantación, Versión beta del producto, 249, Revision por Pares, 250, 251 → 238, 239, 240, 241, 242, 243, 244, 245, 246, 247, 248, 249, 250, 251 | constraint none → start no earlier than 2010-11-06 00:00 |
| 255 | **Fase Implantación** | 2010-11-07 01:00 → 2010-11-07 04:00 | 2010-11-14 01:00 → 2010-11-18 02:00 (+4d) | 7d? → 10.92d? |  |  |  |
| 256 | **Iteración 1** | 2010-11-07 01:00 → 2010-11-07 04:00 | 2010-11-14 01:00 → 2010-11-18 02:00 (+4d) | 7d? → 10.92d? |  |  |  |
| 257 | **Semana 14** | 2010-11-07 01:00 → 2010-11-07 04:00 | 2010-11-14 01:00 → 2010-11-18 02:00 (+4d) | 7d? → 10.92d? |  |  |  |

| ID | Task | Start | Finish | Duration | Total float | Predecessors | Other |
| --- | --- | --- | --- | --- | --- | --- | --- |
| 258 | Diseño / Implementación | 2010-11-07 01:00 → 2010-11-07 04:00 | 2010-11-08 01:00 → 2010-11-08 04:00 |  | 6d → 9.92d |  |  |
| 259 | Verificación | 2010-11-07 01:00 → 2010-11-07 04:00 | 2010-11-08 01:00 → 2010-11-08 04:00 |  | 6d → 9.92d |  |  |
| 260 | **Gestión del Proyecto** | 2010-11-07 01:00 → 2010-11-16 00:00 (+9d) | 2010-11-08 01:00 → 2010-11-18 02:00 (+10d) | 1d? → 2.08d | 6d → 0d |  |  |
| 261 | Evaluación de satisfacción del cliente | 2010-11-07 01:00 → 2010-11-17 00:00 (+10d) | 2010-11-07 02:00 → 2010-11-17 02:00 (+10d) | 1h? → 2h | 6.92d → 1d |  | constraint none → start no earlier than 2010-11-17 00:00; resources Ignacio Infante; Juan Ghiringhelli → Juan Ghiringhelli; Javier Madeiro; Marcos Sander |
| 264 | **Gestión de la Calidad** | 2010-11-07 01:00 → 2010-11-07 04:00 | 2010-11-07 07:00 → 2010-11-07 10:00 |  | 6.75d → 10.67d |  |  |
| 265 | Revisión de Documentos | 2010-11-07 01:00 → 2010-11-07 04:00 | 2010-11-07 07:00 → 2010-11-07 10:00 |  | 6.75d → 10.67d |  |  |
| 266 | Gestión de la Configuración | 2010-11-07 01:00 → 2010-11-07 04:00 | 2010-11-08 01:00 → 2010-11-08 04:00 |  | 6d → 9.92d |  |  |
| 267 | **Entregables** | 2010-11-07 01:00 → 2010-11-10 00:00 (+3d) | 2010-11-07 03:00 → 2010-11-13 11:30 (+6d) | 0.08d? → 3.48d | 6.92d → 4.6d |  |  |
| 268 | Informe final de verificación | 2010-11-07 01:00 → 2010-11-13 00:00 (+6d) | 2010-11-07 02:00 → 2010-11-13 02:00 (+6d) | 1h? → 2h | 6.92d → 4.94d |  | constraint none → start no earlier than 2010-11-13 00:00 |
| 269 | Reporte de pruebas | 2010-11-07 01:00 → 2010-11-13 00:00 (+6d) | 2010-11-07 02:00 → 2010-11-13 04:00 (+6d) | 1h? → 4h | 6.92d → 4.85d |  | constraint none → start no earlier than 2010-11-13 00:00 |
| 270 | Reporte Final de Pruebas de Aceptacion | 2010-11-07 01:00 → 2010-11-13 00:00 (+6d) | 2010-11-07 02:00 → 2010-11-13 04:00 (+6d) | 1h? → 4h | 6.92d → 4.85d |  | constraint none → start no earlier than 2010-11-13 00:00 |
| 271 | Infome final de calidad | 2010-11-07 01:00 → 2010-11-13 00:00 (+6d) | 2010-11-07 02:00 → 2010-11-13 08:00 (+6d) | 1h? → 8h | 6.92d → 4.69d |  | constraint none → start no earlier than 2010-11-13 00:00 |
| 272 | Informe de revisión de SQA | 2010-11-07 01:00 → 2010-11-13 00:00 (+6d) | 2010-11-07 02:00 → 2010-11-13 02:00 (+6d) | 1h? → 2h | 6.92d → 4.94d |  | constraint none → start no earlier than 2010-11-13 00:00 |
| 273 | Materiales para soporte al usuario | 2010-11-07 01:00 → 2010-11-13 00:00 (+6d) | 2010-11-07 02:00 → 2010-11-13 02:00 (+6d) | 1h? → 2h | 6.92d → 4.94d |  | constraint none → start no earlier than 2010-11-13 00:00 |
| 274 | Acta de reunión de equipo | 2010-11-07 01:00 → 2010-11-13 00:00 (+6d) | 2010-11-07 02:00 → 2010-11-13 01:00 (+6d) | 1h? → 1h | 6.92d → 4.98d |  | constraint none → start no earlier than 2010-11-13 00:00 |
| 275 | Informe de conclusiones de la fase | 2010-11-07 01:00 → 2010-11-13 00:00 (+6d) | 2010-11-07 02:00 → 2010-11-13 01:00 (+6d) | 1h? → 1h | 6.92d → 4.98d |  | constraint none → start no earlier than 2010-11-13 00:00 |
| 276 | Informe de situación de proyecto | 2010-11-07 01:00 → 2010-11-13 00:00 (+6d) | 2010-11-07 02:00 → 2010-11-13 01:00 (+6d) | 1h? → 1h | 6.92d → 4.98d |  | constraint none → start no earlier than 2010-11-13 00:00 |
| 277 | Informe final de proyecto | 2010-11-07 01:00 → 2010-11-13 00:00 (+6d) | 2010-11-07 02:00 → 2010-11-13 04:00 (+6d) | 1h? → 4h | 6.92d → 4.85d |  | constraint none → start no earlier than 2010-11-13 00:00 |
| 278 | Lecciones Aprendidas | 2010-11-07 01:00 → 2010-11-13 00:00 (+6d) | 2010-11-07 02:00 → 2010-11-13 00:30 (+6d) | 1h? → 0.5h | 6.92d → 5d |  | constraint none → start no earlier than 2010-11-13 00:00 |
| 279 | Presentación de cierre de proyecto | 2010-11-07 01:00 → 2010-11-13 00:00 (+6d) | 2010-11-07 02:00 → 2010-11-13 04:00 (+6d) | 1h? → 4h | 6.92d → 4.85d |  | constraint none → start no earlier than 2010-11-13 00:00 |
| 280 | Registro de actividades | 2010-11-07 01:00 → 2010-11-13 00:00 (+6d) | 2010-11-07 02:00 → 2010-11-13 01:00 (+6d) | 1h? → 1h | 6.92d → 4.98d |  | constraint none → start no earlier than 2010-11-13 00:00 |
| 281 | Encuesta de satisfacción del cliente | 2010-11-07 01:00 → 2010-11-10 00:00 (+3d) | 2010-11-07 02:00 → 2010-11-10 02:00 (+3d) | 1h? → 2h | 6.92d → 7.94d |  | constraint none → start no earlier than 2010-11-10 00:00 |
| 282 | Documentación técnica | 2010-11-07 01:00 → 2010-11-13 00:00 (+6d) | 2010-11-07 02:00 → 2010-11-13 01:00 (+6d) | 1h? → 1h | 6.92d → 4.98d |  | constraint none → start no earlier than 2010-11-13 00:00 |
| 283 | Versión alfa del producto | 2010-11-07 01:00 → 2010-11-13 00:00 (+6d) | 2010-11-07 02:00 → 2010-11-13 00:00 (+6d) | 1h? → 0h | 6.92d → 5.02d |  | constraint none → start no earlier than 2010-11-13 00:00 |
| 284 | Informe final de configuración | 2010-11-07 01:00 → 2010-11-13 00:00 (+6d) | 2010-11-07 02:00 → 2010-11-13 10:00 (+6d) | 1h? → 10h | 6.92d → 4.6d |  | constraint none → start no earlier than 2010-11-13 00:00 |
| 285 | Notas de la versión | 2010-11-07 01:00 → 2010-11-13 00:00 (+6d) | 2010-11-07 02:00 → 2010-11-13 03:00 (+6d) | 1h? → 3h | 6.92d → 4.9d |  | constraint none → start no earlier than 2010-11-13 00:00 |
| 286 | Entrega semanal de SQA | 2010-11-07 02:00 → 2010-11-13 10:00 (+6d) | 2010-11-07 03:00 → 2010-11-13 11:30 (+6d) | 1h? → 1.5h | 6.92d → 4.6d | 268, 269, 270, 271, 272, 273, 274, 275, 276, 277, 278, 279, 280, 281, 282, 283, 261, 284, 285 → 268, 269, 270, 271, 272, 273, 274, 275, 276, 277, 278, 279, 280, 281, 282, 283, 284, 285 |  |

## Version 3 (data date 2010-10-07, saved 2010-10-11)

Last finish stays 2010-11-18. Complete tasks 33 → 11.

Changed:

| ID | Task | Start | Finish | Duration | Complete | Total float | Other |
| --- | --- | --- | --- | --- | --- | --- | --- |
| 1 | **Fase inicial** | 2010-08-09 09:00 A → 2010-08-09 09:00 | 2010-09-05 19:00 A → 2010-09-05 19:00 |  | 100% → 0% | none → 73.29d |  |
| 2 | **Iteración 1** | 2010-08-09 09:00 A → 2010-08-09 09:00 | 2010-08-22 19:00 A → 2010-08-22 19:00 |  | 100% → 0% | none → 86.46d |  |
| 3 | Relevar requerimientos | 2010-08-09 09:00 A → 2010-08-09 09:00 | 2010-08-22 19:00 A → 2010-08-10 00:00 (-12d) | 5.87w → 15h | 100% → 0% | none → 13.38d | resources Analistas → Diego Ricca; Martín Taruselli; José Cordero; Leticia Vilariño |
| 4 | Pautas GUI | 2010-08-09 09:00 A → 2010-08-09 09:00 | 2010-08-22 19:00 A → 2010-08-10 00:00 (-12d) | 5.87w → 15h | 100% → 0% | none → 13.38d | resources GUI → José Cordero; Leticia Vilariño |
| 5 | Modelo de dominio | 2010-08-09 09:00 A → 2010-08-22 17:00 (+13d) | 2010-08-22 19:00 A → 2010-08-22 19:00 | 5.87w → 2h | 100% → 0% | none → 85.96d | resources Analistas → Marcos Sander; Diego Ricca; Martín Taruselli |
| 6 | Definir arquitectura | 2010-08-16 09:00 A → 2010-08-22 04:00 (+6d) | 2010-08-22 19:00 A → 2010-08-22 19:00 | 3.2w → 15h | 100% → 0% | none → 0.58d | resources Arquitecto → Marcos Sander |
| 7 | **Iteración 2** | 2010-08-23 09:00 A → 2010-08-22 19:00 (-1d) | 2010-09-05 19:00 A → 2010-09-05 19:00 | 13.42d → 14d | 100% → 0% | none → 73.29d |  |
| 8 | Diseño prototipo | 2010-08-23 15:00 A → 2010-08-29 09:00 (+6d) | 2010-08-29 19:00 A → 2010-08-29 19:00 | 2.93w → 10h | 100% → 0% | none → 79.38d | resources Especialistas Técnicos → Vicente Acosta; Federico Trinidad; Federico Andrade; Ignacio Infante |
| 9 | Descripción del proyecto | 2010-08-23 09:00 A → 2010-08-22 19:00 (-1d) | 2010-08-29 13:00 A → 2010-08-23 05:00 (-6d) | 2.93w → 10h | 100% → 0% | none → 86.46d | resources Admin → Juan Ghiringhelli |
| 10 | Plan de desarrollo | 2010-08-30 15:00 A → 2010-09-05 09:00 (+6d) | 2010-09-05 19:00 A → 2010-09-05 19:00 | 2.93w → 10h | 100% → 0% | none → 73.29d | resources Analistas → Marcos Sander; Ignacio Infante |
| 11 | Prototipo funcional | 2010-08-30 15:00 A → 2010-08-30 15:00 | 2010-09-05 19:00 A → 2010-08-31 07:00 (-5d) | 2.93w → 16h | 100% → 0% | none → 78.54d | resources Implementadores → Diego Ricca; Federico Andrade; Federico Trinidad; Ignacio Infante; Martín Taruselli; Vicente Acosta |
| 12 | Prototipo GUI | 2010-08-30 15:00 A → 2010-08-30 15:00 | 2010-09-05 19:00 A → 2010-08-31 06:00 (-5d) | 2.93w → 15h | 100% → 0% | none → 78.83d | resources GUI → Leticia Vilariño; José Cordero |
| 13 | **Fase elaboración** | 2010-09-06 09:00 A → 2010-08-31 07:00 A (-6d) | 2010-10-05 11:00 → 2010-10-03 00:00 (-2d) | 29.08d? → 32.71d? | 92% → 67% | 43.62d → 46.08d |  |
| 14 | **Iteración 1** | 2010-09-06 09:00 A → 2010-08-31 07:00 (-6d) | 2010-09-12 13:00 A → 2010-09-06 14:00 (-6d) | 6.17d → 6.29d | 100% → 0% | none → 72.5d |  |
| 15 | Integración del prototipo | 2010-09-06 09:00 A → 2010-08-31 07:00 (-6d) | 2010-09-12 13:00 A → 2010-08-31 13:00 (-12d) | 2.93w → 6h | 100% → 0% | none → 78.54d | resources Enc. Integración → Ignacio Infante |
| 16 | Revisión de atributos de calidad | 2010-09-06 09:00 A → 2010-09-06 09:00 | 2010-09-12 13:00 A → 2010-09-06 14:00 (-6d) | 2.93w → 5h | 100% → 0% | none → 72.5d | resources SQA → Javier Madeiro |
| 17 | **Iteración 2** | 2010-09-20 09:00 A → 2010-09-05 00:00 A (-15d) | 2010-10-05 11:00 → 2010-10-03 00:00 (-2d) | 15.08d? → 28d? | 91% → 68% | 43.62d → 46.08d |  |
| 18 | Login a Facebook desde WP7 | 2010-09-20 09:00 A → 2010-09-05 00:00 (-15d) | 2010-09-21 19:00 A → 2010-09-05 10:00 (-16d) | 0.67d? → 10h | 100% → 0% | none → 24.96d | constraint none → start no earlier than 2010-09-05 00:00; resources Vicente Acosta, Leticia Vilariño → Vicente Acosta; Leticia Vilariño |
| 19 | Integrar al proyecto módulo de Facebook | 2010-09-22 09:00 A → 2010-09-05 10:00 (-17d) | 2010-09-22 19:00 A → 2010-09-05 20:00 (-17d) | 0.33d? → 10h | 100% → 0% | none → 73.25d | resources Vicente Acosta, Federico Andrade → Vicente Acosta; Federico Andrade |
| 20 | Filtrar sospechosos según datos |  | 2010-09-27 19:00 A → 2010-09-20 19:00 A (-7d) | 2d? → 10h |  |  |  |
| 21 | Armar tabla para datos sospechosos | 2010-09-28 09:00 A → 2010-09-20 19:00 (-8d) | 2010-10-01 19:00 A → 2010-09-20 21:00 (-11d) | 1.33d? → 2h | 100% → 0% | none → 58.21d | resources Federico Andrade, Federico Trinidad → Federico Andrade; Federico Trinidad |
| 22 | Llenar tablas para pistas ciudad |  | 2010-09-23 19:00 A → 2010-09-21 17:00 A (-2d) |  |  |  |  |
| 23 | Parsear noticias de ciudad de Bing |  | 2010-10-01 19:00 A → 2010-09-26 09:00 A (-5d) |  |  |  |  |
| 24 | Servicios de Azure para WP7 para workflow de juego |  | 2010-09-24 19:00 A → 2010-09-22 01:00 A (-2d) |  |  |  |  |
| 25 | Armar iteración para usuario |  | 2010-09-22 19:00 A → 2010-09-20 17:00 (-2d) | 1d? → 0.33d? | 100% → 0% | none → 2.67d | resources Martín Tarusello, Diego Ricca, Nacho Infante → none |
| 26 | Modelar estructura de las pistas |  | 2010-09-28 17:00 A → 2010-09-23 21:00 (-5d) | 1.25d? → 0.5d? | 100% → 0% | none → 4.83d | resources Martín Tarusello, Diego Ricca → none |
| 27 | Llenar tablas con datos definitivos |  | 2010-10-01 17:00 A → 2010-09-29 01:00 (-2d) | 1d? → 0.33d? | 100% → 0% | none → 1.33d | resources Martín Tarusello, Diego Ricca → none |
| 28 | Integrar código workflow con Gui y datos |  | 2010-10-05 11:00 A → 2010-10-01 17:00 (-4d) | 1d? → 0.25d? | 100% → 0% | none → 47.38d | resources Martín Tarusello, Diego Ricca, Nacho Infante [66.7%] → none |
| 29 | Validar arquitectura |  | 2010-09-22 19:00 A → 2010-09-21 09:00 A (-1d) |  |  |  |  |
| 30 | Reuniones para completar base de datos |  | 2010-09-29 19:00 A → 2010-09-25 01:00 A (-4d) |  |  |  |  |
| 31 | Diseño iteración |  | 2010-10-01 19:00 A → 2010-10-01 01:00 A |  |  |  |  |
| 32 | Planificar verificación de iteración |  | 2010-09-20 19:00 A → 2010-09-20 15:00 | 0.33d? → 0.25d? | 100% → 0% | none → 0.75d | resources Alejandro Garcia → none |
| 33 | Armar casos de prueba generales |  | 2010-09-27 19:00 A → 2010-09-22 01:00 (-5d) | 1.67d? → 0.67d? | 100% → 0% | none → 6.33d | resources Alejandro Garcia → none |
| 34 | Diseñar casos de prueba generales |  | 2010-10-01 19:00 A → 2010-09-28 23:00 (-3d) | 1.33d? → 0.58d? | 100% → 0% | none → 50.12d | resources Alejandro Garcia → none |
| 35 | RTF Modelo CU |  | 2010-09-21 19:00 A → 2010-09-21 01:00 A |  |  |  |  |
| 36 | RTF Arquitectura |  | 2010-09-23 19:00 A → 2010-09-23 01:00 |  | 100% → 50% | none → 55.88d | resources Javier Madeiro → Javier Madeiro; Marcos Sander |
| 37 | RTF Proyecto |  | 2010-09-24 17:00 → 2010-09-24 13:00 | 0.33d? → 0.17d? |  | 54.38d → 54.54d | resources Javier Madeiro → Javier Madeiro; Juan Ghiringhelli |
| 38 | RTF Desarrollo |  | 2010-09-28 19:00 A → 2010-09-28 01:00 A |  |  |  |  |
| 41 | Animaciones Silverlight |  | 2010-10-01 19:00 A → 2010-09-23 17:00 A (-8d) |  |  |  |  |
| 42 | Verificar código FE-IT2 |  | 2010-09-22 01:00 → 2010-09-21 23:00 (-1d) | 1.67d → 1.58d | 25% → 21% | 57.04d → 57.12d | resources Juan Ghiringhelli, Javier Madeiro, Marcos Sander → none |
| 44 | Integración |  | 2010-10-01 16:00 A → 2010-10-01 14:00 A |  |  |  |  |
| 51 | Actualización verificación unitaria versión beta |  | 2010-10-04 14:00 → 2010-10-04 13:10 | 5h → 4.17h |  | 41.38d → 41.41d | resources Diego Ricca, Ignacio Infante, Martín Taruselli, Federico Andrade, Federico Trinidad, Vicente Acosta → Diego Ricca; Federico Andrade; Federico Trinidad; Ignacio Infante; Martín Taruselli; Vicente Acosta |
| 52 | Liberación versión beta 1.0 |  |  | 0w → 0h |  |  |  |
| 58 | Verificación casos de uso Listar Sospechoso, Filtrar sospechoso, Lenguaje, Salir |  |  |  |  |  | resources Alejando Garcia → Alejandro García |
| 72 | Establecimiento de línea base de código |  |  |  |  |  | was named Establecimiento de linea base de código; resources Vicente Acsta → Vicente Acosta |
| 98 | Armar datos Gran sospechoso |  |  |  |  |  | resources Federico Andrade, Vicente Acosta → Federico Andrade; Vicente Acosta |
| 101 | Menú de ayuda |  |  |  |  |  | was named Menu de ayuda |
| 103 | Inicio de código manejo multi-usuario |  |  |  |  |  | resources Diego Ricca, Martín Taruselli → Diego Ricca; Martín Taruselli |
| 106 | Verificación unitaria |  |  |  |  |  | resources Ignacio Infante, Diego Ricca, Martín Taruselli, Federico Andrade, Federico Trinidad, Vicente Acosta → Diego Ricca; Federico Andrade; Federico Trinidad; Ignacio Infante; Martín Taruselli; Vicente Acosta |
| 107 | Integración iteración 1 |  |  |  |  |  | resources Ignacio Infante, Diego Ricca, Martín Taruselli, Federico Andrade, Federico Trinidad, Vicente Acosta, Leticia Vilariño → Diego Ricca; Federico Andrade; Federico Trinidad; Ignacio Infante; Martín Taruselli; Vicente Acosta; Leticia Vilariño |
| 113 | Verificación casos de uso Listar Sospechoso, Filtrar sospechoso, Lenguaje, Salir |  |  |  |  |  | resources Alejando Garcia → Alejandro García |
| 116 | Corregir casos de uso Interrogar Personaje, Actualizar Famoso, Actualizar Ciudad |  |  |  |  |  | resources Vicente Acosta: Federico Trinidad → Federico Trinidad; Vicente Acosta |
| 176 | Documento de Evaluación y Ajustes al Plan del Proyecto |  |  |  |  |  | was named Documento de Evaluacion y Ajustes al Plan del Proyecto |
| 241 | Reporte Final de Pruebas de Aceptación |  |  |  |  |  | was named Reporte Final de Pruebas de Aceptacion |
| 270 | Reporte Final de Pruebas de Aceptación |  |  |  |  |  | was named Reporte Final de Pruebas de Aceptacion |
| 271 | Informe final de calidad |  |  |  |  |  | was named Infome final de calidad |
